Schedule from MS Project, 2018-09-19 to 2019-01-16, A marks actual dates.
Microsoft

## Calendars

- 7天工作日: Mon-Fri 19:00-20:00; Sat-Sun 12:00-17:00, 18:00-21:00. Exceptions (off unless hours are given): 2018-10-01 to 2018-10-07 (国庆), 2018-11-09 (团队建设1).

## Resources

| Resource |
| --- |
| 罗培铖 |
| 苏碧青 |
| 赵豪杰 |
| 张嘉诚 |
| 郑丞钧 |

## Schedule

| ID | WBS | Task | Duration | Start | Finish | Predecessors | Complete | Remaining | Constraint | Resources | Work | Actual work | 输入 | 输出 |
| --- | --- | --- | --- | --- | --- | --- | --- | --- | --- | --- | --- | --- | --- | --- |
| 1 | 1 | **软件工程系列渔乐生活APP需求工程计划** | 45.5d | 2018-09-19 08:00 A | 2019-01-16 18:00 |  | 57% | 19.57d |  |  | 516.21h | 478.71h |  |  |
| 2 | 1.1 | **知识准备——UML翻转课堂** | 27.88d? | 2018-10-12 09:00 A | 2018-12-23 18:00 A |  | 100% |  |  |  | 90.6h | 90.6h |  |  |
| 3 | 1.1.1 | UML概述材料 | 0.75d | 2018-10-12 09:00 A | 2018-10-12 16:00 A |  | 100% |  |  | 赵豪杰 | 6h | 6h |  |  |
| 4 | 1.1.2 | UML概论ppt制作 | 1d | 2018-10-14 09:00 A | 2018-10-14 17:00 A | 3 | 100% |  |  | 张嘉诚 | 8h | 8h | UML学习 | UML概论ppt |
| 5 | 1.1.3 | UML概述修改 | 0.12d | 2018-10-15 09:00 A | 2018-10-15 10:00 A | 4 | 100% |  |  | 赵豪杰 | 1h | 1h | UML概论ppt | UML概论ppt |
| 6 | 1.1.4 | UML概述修改 | 1d | 2018-10-17 09:00 A | 2018-10-17 18:00 A | 5 | 100% |  |  | 罗培铖 | 0.5h | 0.5h | UML概论ppt | UML概论ppt |
| 7 | 1.1.5 | UML概述修改 | 0.06d | 2018-10-17 09:00 A | 2018-10-17 09:30 A | 6 | 100% |  | start no earlier than 2018-10-17 09:00 | 张嘉诚 | 0.5h | 0.5h | UML概论ppt | UML概论ppt |
| 8 | 1.1.6 | UML概述修改 | 1d | 2018-10-19 09:00 A | 2018-10-19 18:00 A | 7 | 100% |  |  | 罗培铖 | 1h | 1h | UML概论ppt | UML概论ppt |
| 9 | 1.1.7 | UML概论评审 | 0.03d | 2018-10-19 09:00 A | 2018-10-19 09:12 A | 8 | 100% |  |  | 罗培铖; 苏碧青; 张嘉诚; 赵豪杰; 郑丞钧 | 1h | 1h | UML概论ppt | 评审通过 |
| 10 | 1.1.8 | UML工具:Rational Rose及ppt制作 | 1.02d | 2018-10-21 09:00 A | 2018-10-21 18:12 A | 9 | 100% |  |  | 张嘉诚 | 6h | 6h | UML工具学习 | UML工具:Rational Rose ppt |
| 11 | 1.1.9 | UML工具:Rational Rose ppt修改 | 0.06d | 2018-10-21 18:12 A | 2018-10-21 18:42 A | 10 | 100% |  | finish no earlier than 2018-10-21 18:00 | 赵豪杰 | 0.5h | 0.5h | UML工具:Rational Rose ppt | UML工具:Rational Rose ppt |
| 12 | 1.1.10 | UML概述修改 | 1.12d | 2018-10-21 09:00 A | 2018-10-21 19:00 A | 9 | 100% |  |  | 张嘉诚 | 2h | 2h | UML概论ppt | UML概论pptv1.0.0 |
| 13 | 1.1.11 | UML工具:Rational Rose ppt修改 | 1d | 2018-10-23 09:00 A | 2018-10-23 18:00 A | 11 | 100% |  |  | 张嘉诚 | 1h | 1h | UML工具:Rational Rose ppt | UML工具:Rational Rose ppt |
| 14 | 1.1.12 | UML工具:Rational Rose评审 | 0.2d | 2018-10-24 09:00 A | 2018-10-24 10:36 A | 11 | 100% |  |  | 罗培铖; 苏碧青; 张嘉诚; 赵豪杰; 郑丞钧 | 1h | 1h | UML工具:Rational Rose ppt | 评审通过 |
| 15 | 1.1.13 | UML基础1的ppt材料制作 | 1.12d | 2018-10-27 09:00 A | 2018-10-27 19:00 A | 14 | 100% |  |  | 赵豪杰; 郑丞钧; 苏碧青; 罗培铖 | 7h | 7h | UML材料制作 | ppt材料 |
| 16 | 1.1.14 | UML基础1:ppt | 0.75d | 2018-10-27 18:00 A | 2018-10-28 16:00 A | 15 | 100% |  |  | 张嘉诚 | 6h | 6h | ppt材料 | UML基础1:pptv0.1.0 |
| 17 | 1.1.15 | UML基础1:ppt修改 | 1d | 2018-10-30 09:00 A | 2018-10-30 18:00 A | 16 | 100% |  |  | 张嘉诚 | 2h | 2h | UML基础1:pptv0.1.0 | UML基础1:pptv0.2.0 |
| 18 | 1.1.16 | UML基础1评审 | 0.2d | 2018-10-31 09:00 A | 2018-10-31 10:36 A | 17 | 100% |  |  | 罗培铖; 苏碧青; 张嘉诚; 赵豪杰; 郑丞钧 | 5h | 5h | UML基础1:pptv0.2.0 | UML评审通过 |
| 19 | 1.1.17 | UML基础2的ppt材料制作 | 0.25d | 2018-11-01 09:00 A | 2018-11-01 11:00 A | 18 | 100% |  | start no earlier than 2018-11-01 09:00 | 罗培铖 | 2h | 2h | UML材料制作 | ppt材料 |
| 20 | 1.1.18 | UML基础1:ppt修改 | 1d | 2018-11-02 09:00 A | 2018-11-02 18:00 A | 18 | 100% |  |  | 张嘉诚 | 1h | 1h | UML基础1:pptv0.2.0 | UML基础1:pptv0.3.0 |
| 21 | 1.1.19 | UML基础1:ppt修改 | 0.5d | 2018-11-02 09:00 A | 2018-11-02 14:00 A | 20 | 100% |  |  | 张嘉诚 | 0.5h | 0.5h | UML基础1:pptv0.3.0 | UML基础1:pptv0.3.1 |
| 22 | 1.1.20 | UML基础2:ppt | 1.25d | 2018-11-03 09:00 A | 2018-11-03 20:00 A | 19 | 100% |  |  | 张嘉诚 | 6h | 6h | ppt材料 | UML基础2pptv0.1.0 |
| 23 | 1.1.21 | UML基础2:ppt修改 | 0.06d? | 2018-11-03 18:00 A | 2018-11-03 18:30 A | 22 | 100% |  | finish no earlier than 2018-11-03 18:00 | 赵豪杰; 张嘉诚 | 1h | 1h | UML基础2pptv0.1.0 | UML基础2pptv0.2.1 |
| 24 | 1.1.22 | UML基础2:ppt修改 | 1d | 2018-11-04 12:00 A | 2018-11-04 21:00 A | 23 | 100% |  | start no earlier than 2018-11-04 09:00 | 罗培铖 | 1h | 1h | UML基础2pptv0.2.1 | UML基础2pptv0.2.2 |
| 25 | 1.1.23 | UML基础2:ppt修改 | 0.1d | 2018-11-04 12:00 A | 2018-11-04 12:48 A | 24 | 100% |  | start no earlier than 2018-11-04 09:00 | 罗培铖 | 0.1h | 0.1h | UML基础2pptv0.2.2 | UML基础2pptv0.2.3 |
| 26 | 1.1.24 | UML基础2:ppt修改 | 1d | 2018-11-06 09:00 A | 2018-11-06 18:00 A | 25 | 100% |  |  | 张嘉诚 | 2h | 2h | UML基础2pptv0.2.3 | UML基础2pptv0.2.4 |
| 27 | 1.1.25 | UML基础2:ppt修改 | 0.06d | 2018-11-06 09:00 A | 2018-11-06 09:30 A | 26 | 100% |  |  | 张嘉诚 | 0.5h | 0.5h | UML基础2pptv0.2.4 | UML基础2pptv0.2.5 |
| 28 | 1.1.26 | UML基础2:评审 | 0.2d | 2018-11-10 09:00 A | 2018-11-10 13:36 A | 27 | 100% |  |  | 罗培铖; 苏碧青; 张嘉诚; 赵豪杰; 郑丞钧 | 5h | 5h | UML基础2ppt | UML评审通过 |
| 29 | 1.1.27 | UML基础3:材料制作 | 0.86d | 2018-12-09 12:00 A | 2018-12-09 19:52 A | 28 | 100% |  | finish no earlier than 2018-12-09 18:00 | 罗培铖 | 5h | 5h | UML材料制作 | ppt材料 |
| 30 | 1.1.28 | UML基础3:ppt制作 | 0.12d? | 2018-12-09 19:52 A | 2018-12-09 20:52 A | 29 | 100% |  |  | 张嘉诚 | 6h | 6h | ppt材料 | UML基础3ppt |
| 31 | 1.1.29 | UML基础4:材料制作 | 0.69d? | 2018-12-22 12:00 A | 2018-12-22 18:30 A | 30 | 100% |  | start no earlier than 2018-12-22 09:00 | 罗培铖 | 5.5h | 5.5h | UML材料制作 | ppt材料 |
| 32 | 1.1.30 | UML基础4:材料制作 | 0.38d? | 2018-12-23 12:00 A | 2018-12-23 15:00 A | 31 | 100% |  | start no earlier than 2018-12-23 09:00 | 罗培铖 | 3h | 3h | UML材料制作 | ppt材料 |
| 33 | 1.1.31 | UML基础4:ppt制作 | 0.25d | 2018-12-23 15:00 A | 2018-12-23 18:00 A | 32 | 100% |  |  | 苏碧青 | 3.5h | 3.5h | ppt材料 | UML基础4:ppt |

| ID | WBS | Task | Type | Duration | Start | Finish | Predecessors | Complete | Remaining | Total slack | Constraint | Resources | Work | Actual work | 输入 | 输出 |
| --- | --- | --- | --- | --- | --- | --- | --- | --- | --- | --- | --- | --- | --- | --- | --- | --- |
| 34 | 1.2 | **项目启动** |  | 2.62d | 2018-09-19 08:00 A | 2018-09-26 16:36 A |  | 100% |  |  |  |  | 11h | 11h |  |  |
| 35 | 1.2.1 | 项目任务书下达 |  | 0.12d | 2018-09-19 08:00 A | 2018-09-19 09:00 A |  | 100% |  |  | finish no earlier than 2018-09-19 18:00 | 赵豪杰 | 1h | 1h | 项目任务书 | 项目确认 |
| 36 | 1.2.2 | logo设计 |  | 0.12d | 2018-09-21 08:00 A | 2018-09-21 09:00 A | 169 | 100% |  |  |  | 苏碧青 | 1h | 1h | 素材 | 渔乐生活logo |
| 37 | 1.2.3 | 软件资源配置 |  | 0.5d | 2018-09-21 08:00 A | 2018-09-21 12:00 A | 169 | 100% |  |  |  | 罗培铖 | 4h | 4h | 安装 | 软件资源 |
| 38 | 1.2.4 | 可行性分析文档起草 |  | 0.62d | 2018-09-26 10:36 A | 2018-09-26 16:36 A | 170 | 100% |  |  |  | 罗培铖 | 5h | 5h | 初步可行性分析文档，可行性文档中的图表 | 可行性分析文档v0.1.0 |
| 39 | 1.3 | **项目计划** |  | 7.12d? | 2018-09-28 09:00 A | 2018-10-21 19:00 A | 34 | 100% |  |  |  |  | 52h | 52h |  |  |
| 40 | 1.3.1 | 需求工程项目计划起草 |  | 0.38d | 2018-09-28 09:00 A | 2018-09-28 12:00 A | 171 | 100% |  |  |  | 张嘉诚 | 3h | 3h | 分配结果 | 需求工程项目计划v1.0.1 |
| 41 | 1.3.2 | 甘特图 |  | 1.12d | 2018-09-29 09:00 A | 2018-09-29 20:00 A | 172 | 100% |  |  | finish no earlier than 2018-09-29 18:00 | 郑丞钧 | 6h | 6h | 分配结果 | 甘特图v3 |
| 42 | 1.3.3 | OBS |  | 1.14d | 2018-09-29 09:00 A | 2018-09-29 21:00 A | 41 | 100% |  |  |  | 苏碧青 | 2h | 2h | 甘特图v3 | WBS |
| 43 | 1.3.4 | WBS |  | 0.25d | 2018-09-29 09:00 A | 2018-09-29 19:00 A | 41 | 100% |  |  |  | 苏碧青 | 2h | 2h | 甘特图v3 | OBS |
| 44 | 1.3.5 | 项目章程起草 |  | 0.38d | 2018-09-29 09:00 A | 2018-09-29 12:00 A | 172 | 100% |  |  |  | 赵豪杰 | 3h | 3h | 工作改进建议 | 项目章程v0.1.0 |
| 45 | 1.3.6 | 需求工程项目计划ppt制作 |  | 0.96d | 2018-09-30 09:00 A | 2018-09-30 20:40 A | 172, 40 | 100% |  |  |  | 张嘉诚 | 3h | 3h | 需求工程项目计划v1.0.1 | 需求工程项目计划答辩ppt |
| 46 | 1.3.7 | 配置管理计划起草 |  | 1d | 2018-09-30 09:00 A | 2018-09-30 17:00 A | 172 | 100% |  |  |  | 罗培铖 | 1h | 1h | 工作改进建议 | 配置管理计划文档v0.1.0 |
| 47 | 1.3.8 | 可行性分析文档修改 |  | 0.25d | 2018-10-14 09:00 A | 2018-10-14 13:00 A | 175, 38 | 100% |  |  | finish no earlier than 2018-10-14 18:00 | 罗培铖 | 2h | 2h | 可行性分析文档v0.1.0 | 可行性分析文档v0.1.1 |
| 48 | 1.3.9 | 需求工程项目计划修订 |  | 1.12d | 2018-10-14 09:00 A | 2018-10-14 19:00 A | 171, 175 | 100% |  |  |  | 苏碧青 | 3h | 3h | 需求工程项目计划v1.0.1 | 需求工程项目计划v1.1.1 |
| 49 | 1.3.10 | 需求工程项目计划ppt修订 |  | 0.12d? | 2018-10-14 12:00 A | 2018-10-14 13:00 A | 45, 175 | 100% |  |  | start no earlier than 2018-10-14 09:00 | 苏碧青 | 1h | 1h | 需求工程项目计划答辩ppt | 需求工程项目计划答辩ppt |
| 50 | 1.3.11 | 甘特图修订 |  | 1.25d | 2018-10-14 09:00 A | 2018-10-14 19:00 A | 41, 175 | 100% |  |  |  | 郑丞钧 | 4h | 4h | 甘特图v3 | 甘特图v4 |
| 51 | 1.3.12 | 项目章程修订 |  | 0.25d | 2018-10-20 09:00 A | 2018-10-20 11:00 A | 44, 178 | 100% |  |  |  | 赵豪杰 | 2h | 2h | 项目章程v0.1.0 | 项目章程v1.1.0 |
| 52 | 1.3.13 | 软件开发计划起草 |  | 0.75d | 2018-10-20 09:00 A | 2018-10-20 15:00 A | 178 | 100% |  |  |  | 苏碧青 | 6h | 6h | 访谈记录 | 软件开发计划文档v1.1.0 |
| 53 | 1.3.14 | 需求工程项目计划修订（初步） | milestone | 1.12d | 2018-10-21 09:00 A | 2018-10-21 19:00 A | 48, 178 | 100% |  |  |  | 苏碧青 | 3h | 3h | 需求工程项目计划v1.1.1 | 需求工程项目计划v1.1.2 |
| 54 | 1.3.15 | 软件开发计划修订 |  | 0.38d | 2018-10-21 09:00 A | 2018-10-21 12:00 A | 52, 178 | 100% |  |  |  | 苏碧青 | 3h | 3h | 软件开发计划文档v1.1.0 | 软件开发计划文档v1.1.1 |
| 55 | 1.3.16 | 甘特图修订 |  | 0.93d | 2018-10-21 09:00 A | 2018-10-21 16:24 A | 50, 178 | 100% |  |  |  | 郑丞钧 | 5h | 5h | 甘特图v4 | 甘特图v5 |
| 56 | 1.3.17 | 软件开发计划修订 |  | 0.5d | 2018-10-21 09:00 A | 2018-10-21 16:00 A | 54 | 100% |  |  |  | 郑丞钧 | 3h | 3h | 软件开发计划文档v1.1.1 | 软件开发计划文档v1.1.2 |
| 57 | 1.4 | **项目执行** |  | 27.12d? | 2018-10-21 09:00 A | 2018-12-31 18:00 | 39 | 41% | 15.88d? | 4.38d |  |  | 217.49h | 217.49h |  |  |
| 58 | 1.4.1 | **第一轮迭代** |  | 27.12d? | 2018-10-21 09:00 A | 2018-12-31 18:00 | 39 | 41% | 15.88d? | 4.38d |  |  | 217.49h | 217.49h |  |  |
| 59 | 1.4.1.1 | **需求获取** |  | 9d? | 2018-10-21 09:00 A | 2018-11-13 20:00 A | 39 | 100% |  |  |  |  | 84.79h | 84.79h |  |  |
| 60 | 1.4.1.1.1 | 定义愿景和范围起草 |  | 0.25d | 2018-10-21 09:00 A | 2018-10-21 11:00 A | 178 | 100% |  |  |  | 赵豪杰 | 2h | 2h | 访谈记录 | 愿景和范围文档v0.1.0 |
| 61 | 1.4.1.1.2 | 需求工程项目计划修订 |  | 0.25d | 2018-10-26 09:00 A | 2018-10-26 11:00 A | 180, 53 | 100% |  |  |  | 罗培铖 | 2h | 2h | 需求工程项目计划v1.1.2 | 需求工程项目计划v1.1.3 |
| 62 | 1.4.1.1.3 | 需求工程项目计划修订 |  | 0.29d | 2018-10-26 15:20 A | 2018-10-27 12:40 A | 61 | 100% |  |  |  | 苏碧青 | 4h | 4h | 需求工程项目计划v1.1.3 | 需求工程项目计划v1.2.3 |
| 63 | 1.4.1.1.4 | 确定质量属性 | milestone | 0.66d | 2018-10-27 09:00 A | 2018-10-27 14:15 A | 180 | 100% |  |  |  | 罗培铖 | 7h | 7h | 确定质量属性 | 质量工程计划v0.1.1 |
| 64 | 1.4.1.1.5 | 需求工程项目计划修订 |  | 0.67d | 2018-10-27 09:00 A | 2018-10-27 14:20 A | 62 | 100% |  |  |  | 郑丞钧 | 2h | 2h | 需求工程项目计划v1.2.3 | 需求工程项目计划v1.2.4 |
| 65 | 1.4.1.1.6 | 甘特图修订 |  | 0.73d | 2018-10-28 09:00 A | 2018-10-28 14:52 A | 55, 180 | 100% |  |  | finish no earlier than 2018-10-28 18:00 | 郑丞钧 | 4h | 4h | 甘特图v5 | 甘特图v6 |
| 66 | 1.4.1.1.7 | 更新WBS,OBS |  | 0.12d | 2018-10-28 18:52 A | 2018-10-28 19:52 A | 65, 180 | 100% |  |  |  | 苏碧青 | 1h | 1h | 甘特图v6 | WBS,OBS |
| 67 | 1.4.1.1.8 | 修改Logo |  | 0.12d | 2018-10-28 12:00 A | 2018-10-28 13:00 A | 36, 180 | 100% |  |  | start no earlier than 2018-10-28 09:00 | 苏碧青 | 1h | 1h | Logo | Logo |
| 68 | 1.4.1.1.9 | 需求工程项目计划修订 |  | 0.38d | 2018-10-28 09:00 A | 2018-10-28 12:00 A | 64 | 100% |  |  |  | 苏碧青 | 3h | 3h | 需求工程项目计划v1.2.4 | 需求工程项目计划v1.2.5 |
| 69 | 1.4.1.1.10 | 可行性分析修订 |  | 1d | 2018-10-28 09:00 A | 2018-10-28 17:00 A | 47, 180 | 100% |  |  |  | 罗培铖 | 1h | 1h | 可行性分析文档v0.1.1 | 可行性分析文档v0.1.2 |
| 70 | 1.4.1.1.11 | 可行性分析修订 |  | 1d | 2018-10-28 09:00 A | 2018-10-28 17:00 A | 69 | 100% |  |  |  | 罗培铖 | 2h | 2h | 可行性分析文档v0.1.2 | 可行性分析文档v0.1.3 |
| 71 | 1.4.1.1.12 | 需求工程项目计划修订 |  | 0.25d | 2018-10-28 18:00 A | 2018-10-28 20:00 A | 68 | 100% |  |  |  | 郑丞钧 | 2h | 2h | 需求工程项目计划v1.2.5 | 需求工程项目计划v1.2.6 |
| 72 | 1.4.1.1.13 | 甘特图修订 |  | 0.38d | 2018-10-28 18:00 A | 2018-10-28 21:00 A | 65, 181 | 100% |  |  |  | 郑丞钧 | 3h | 3h | 甘特图v6 | 甘特图v7 |
| 73 | 1.4.1.1.14 | 需求工程项目计划答辩ppt修订 |  | 0.25d | 2018-10-28 18:00 A | 2018-10-28 20:00 A | 49, 181 | 100% |  |  |  | 张嘉诚 | 3h | 3h | 需求工程答辩ppt | 需求工程答辩ppt |
| 74 | 1.4.1.1.15 | 可行性分析修订 |  | 1.12d | 2018-10-29 09:00 A | 2018-10-29 18:00 A | 70, 181 | 100% |  |  | start no earlier than 2018-10-29 09:00 | 罗培铖 | 1h | 1h | 可行性分析文档v0.1.3 | 可行性分析文档v0.1.4 |
| 75 | 1.4.1.1.16 | 需求工程项目计划修订 |  | 1d | 2018-10-30 09:00 A | 2018-10-30 18:00 A | 71, 182 | 100% |  |  |  | 苏碧青 | 1h | 1h | 需求工程项目计划v1.2.6 | 需求工程项目计划v1.2.7 |
| 76 | 1.4.1.1.17 | 可行性分析修订 |  | 1d? | 2018-10-30 08:00 A | 2018-10-30 17:00 A | 74, 182 | 100% |  |  |  | 罗培铖 | 2h | 2h | 可行性分析文档v0.1.4 | 可行性分析文档v0.1.5 |
| 77 | 1.4.1.1.18 | 配置管理计划修订 |  | 1d | 2018-10-30 09:00 A | 2018-10-30 18:00 A | 46, 182 | 100% |  |  |  | 罗培铖 | 2h | 2h | 配置管理计划文档v0.1.0 | 配置管理计划文档v0.1.1 |
| 78 | 1.4.1.1.19 | 甘特图修订 |  | 1d | 2018-10-30 09:00 A | 2018-10-30 18:00 A | 72, 182 | 100% |  |  |  | 郑丞钧 | 2h | 2h | 甘特图v7 | 甘特图v1.1.8 |
| 79 | 1.4.1.1.20 | 配置管理计划修订 |  | 0.5d | 2018-10-30 09:00 A | 2018-10-30 14:00 A | 77 | 100% |  |  |  | 罗培铖 | 1h | 1h | 配置管理计划文档v0.1.1 | 配置管理计划文档v0.1.2 |
| 80 | 1.4.1.1.21 | 需求工程项目计划修订 |  | 1d | 2018-10-30 09:00 A | 2018-10-30 18:00 A | 75 | 100% |  |  |  | 苏碧青 | 1h | 1h | 需求工程项目计划v1.2.7 | 需求工程项目计划v1.2.8 |
| 81 | 1.4.1.1.22 | 软件开发计划修订 |  | 0.67d | 2018-10-30 09:00 A | 2018-10-30 15:20 A | 56, 182 | 100% |  |  |  | 赵豪杰 | 2h | 2h | 软件开发计划文档v1.1.2 | 软件开发计划文档v1.1.3 |
| 82 | 1.4.1.1.23 | 配置管理计划修订 |  | 0.5d | 2018-10-30 14:00 A | 2018-10-30 18:00 A | 79 | 100% |  |  |  | 罗培铖 | 1h | 1h | 配置管理计划文档v0.1.2 | 配置管理计划文档v0.1.3 |
| 83 | 1.4.1.1.24 | 甘特图修订 |  | 1d | 2018-10-31 09:00 A | 2018-10-31 18:00 A | 78 | 100% |  |  |  | 张嘉诚 | 0.1h | 0.1h | 甘特图v1.1.8 | 甘特图v1.1.9 |
| 84 | 1.4.1.1.25 | 需求工程项目计划答辩ppt修订 |  | 1d | 2018-10-31 09:00 A | 2018-10-31 18:00 A | 73 | 100% |  |  | finish no earlier than 2018-10-31 18:00 | 张嘉诚 | 1h | 1h | 需求工程项目计划答辩ppt | 需求工程项目计划答辩pptv0.2.1 |
| 85 | 1.4.1.1.26 | 需求工程项目计划答辩ppt修订 |  | 0.5d | 2018-10-31 09:00 A | 2018-10-31 14:00 A | 84 | 100% |  |  |  | 张嘉诚 | 0.5h | 0.5h | 需求工程项目计划答辩pptv0.2.1 | 需求工程项目计划答辩pptv0.2.2 |
| 86 | 1.4.1.1.27 | 原型设计 |  | 0.62d | 2018-11-01 09:00 A | 2018-11-01 15:00 A | 60 | 100% |  |  | start no earlier than 2018-11-01 09:00 | 赵豪杰 | 5h | 5h | 愿景和范围文档v0.1.0 | 界面原型v0.1.0 |
| 87 | 1.4.1.1.28 | 项目章程修订 |  | 0.1d | 2018-11-01 09:00 A | 2018-11-01 09:48 A | 51 | 100% |  |  |  | 赵豪杰 | 0.1h | 0.1h | 项目章程v1.1.0 | 项目章程v1.1.1 |
| 88 | 1.4.1.1.29 | 需求工程项目计划修订 |  | 1.25d | 2018-11-03 09:00 A | 2018-11-03 20:00 A | 80, 185 | 100% |  |  |  | 苏碧青 | 3h | 3h | 需求工程项目计划v1.2.8 | 需求工程项目计划v1.2.9 |
| 89 | 1.4.1.1.30 | 需求工程项目计划修订 |  | 1d | 2018-11-04 12:00 A | 2018-11-04 21:00 A | 88 | 100% |  |  | start no earlier than 2018-11-04 09:00 | 郑丞钧 | 2h | 2h | 需求工程项目计划v1.2.9 | 需求工程项目计划v1.2.10 |
| 90 | 1.4.1.1.31 | 需求工程项目计划修订 |  | 0.05d | 2018-11-04 12:00 A | 2018-11-04 12:24 A | 89 | 100% |  |  | start no earlier than 2018-11-04 09:00 | 郑丞钧 | 0.1h | 0.1h | 需求工程项目计划v1.2.10 | 需求工程项目计划v1.2.11 |
| 91 | 1.4.1.1.32 | 软件开发计划修订 |  | 1d? | 2018-11-04 09:00 A | 2018-11-04 17:00 A | 81, 185 | 100% |  |  |  | 郑丞钧 | 1h | 1h | 软件开发计划文档v1.1.3 | 软件开发计划文档v1.1.4 |
| 92 | 1.4.1.1.33 | 甘特图修订 |  | 0.75d | 2018-11-04 09:00 A | 2018-11-04 15:00 A | 83, 185 | 100% |  |  |  | 郑丞钧 | 3h | 3h | 甘特图v1.1.9 | 甘特图v1.1.10 |
| 93 | 1.4.1.1.34 | 需求工程项目计划修订 | milestone | 0.06d? | 2018-11-05 19:00 A | 2018-11-05 19:30 A | 90 | 100% |  |  | finish no earlier than 2018-11-05 18:00 | 赵豪杰 | 0.5h | 0.5h | 需求工程项目计划v1.2.11 | 需求工程项目计划v1.2.12 |
| 94 | 1.4.1.1.35 | 软件开发计划修订 | milestone | 0.06d? | 2018-11-05 09:00 A | 2018-11-05 09:30 A | 91 | 100% |  |  | start no earlier than 2018-11-05 09:00 | 赵豪杰 | 0.5h | 0.5h | 软件开发计划文档v1.1.4 | 软件开发计划文档v1.1.5 |
| 95 | 1.4.1.1.36 | OBS修改 |  | 0.88d | 2018-11-06 09:00 A | 2018-11-06 17:00 A | 92, 185 | 100% |  |  |  | 苏碧青 | 0.09h | 0.09h | OBS | OBS |
| 96 | 1.4.1.1.37 | 需求工程项目计划答辩ppt修订 |  | 0.12d? | 2018-11-06 09:00 A | 2018-11-06 10:00 A | 85 | 100% |  |  |  | 张嘉诚 | 1h | 1h | 需求工程项目计划答辩pptv0.2.2 | 需求工程项目计划答辩pptv0.2.3 |
| 97 | 1.4.1.1.38 | 甘特图修订 |  | 0.38d | 2018-11-06 09:00 A | 2018-11-06 12:00 A | 92 | 100% |  |  |  | 郑丞钧 | 3h | 3h | 甘特图v1.1.10 | 甘特图v1.2.0 |
| 98 | 1.4.1.1.39 | 原型修订 |  | 0.12d | 2018-11-08 19:00 A | 2018-11-08 20:00 A | 86 | 100% |  |  | start no earlier than 2018-11-08 09:00 | 赵豪杰 | 3h | 3h | 界面原型v0.1.0 | 界面原型v0.1.1 |
| 99 | 1.4.1.1.40 | 可行性分析修订 | milestone | 0.12d? | 2018-11-11 12:00 A | 2018-11-11 16:00 A | 76, 190 | 100% |  |  | start no earlier than 2018-11-11 09:00 | 罗培铖 | 1h | 1h | 可行性分析文档v0.1.5 | 可行性分析文档v0.1.6 |
| 100 | 1.4.1.1.41 | 需求工程项目计划答辩ppt修订 |  | 0.05d? | 2018-11-11 12:00 A | 2018-11-11 12:24 A | 190, 96 | 100% |  |  |  | 赵豪杰 | 0.4h | 0.4h | 需求工程项目计划答辩pptv0.2.3 | 需求工程项目计划答辩pptv0.2.4 |
| 101 | 1.4.1.1.42 | 需求工程项目计划修订 |  | 1d? | 2018-11-11 12:00 A | 2018-11-11 21:00 A | 93 | 100% |  |  | start no earlier than 2018-11-11 09:00 | 苏碧青 | 1.5h | 1.5h | 需求工程项目计划v1.2.12 | 需求工程项目计划v1.2.13 |
| 102 | 1.4.1.1.43 | 愿景和范围文档修订 |  | 0.06d? | 2018-11-11 12:00 A | 2018-11-11 12:30 A | 190, 60 | 100% |  |  | start no earlier than 2018-11-11 09:00 | 张嘉诚 | 0.5h | 0.5h | 愿景和范围文档v0.1.0 | 愿景和范围文档v0.1.1 |
| 103 | 1.4.1.1.44 | 甘特图修订 |  | 0.5d? | 2018-11-11 12:00 A | 2018-11-11 16:00 A | 190, 97 | 100% |  |  | start no earlier than 2018-11-11 09:00 | 郑丞钧 | 4h | 4h | 甘特图v1.2.0 | 甘特图v1.3.0 |

Notes:
- 35: 说明: 确认需求工程选题为渔乐生活app
- 36: 说明: 绘制渔乐生活logo
- 37: 说明: 配置管理人员为每位组员安装了word,excel,ppt,project,sourcetree等需求工程所需要的软件
- 38: 说明: 可行性分析文档起草
- 40: 说明: 初始版本
- 41: 说明: 起草，中间v1，v2被组长驳回
- 42: 说明: 导出WBS
- 43: 说明: 导出OBS
- 44: 说明: 起草
- 45: 说明: 起草
- 46: 说明: 起草
- 47: 说明: 完善对渔获app的分析
- 48: 说明: 更新目录、修改干系人信息
- 51: 说明: 增加了图标，根据和杨枨老师的访谈修改了目的和用户
- 52: 说明: 与PM评估后决定采用GB+T-8567-2006计算机软件文档编制规范中的软件开发计划(SDP)为主要参考模板，现根据当前项目需要起草适用于本软件项目的开发计划。
- 53: 说明: 新增WBS图、新增输入输出表
- 54: 说明: 新增培训计划，修改引用文件细节，新增文档封面。
- 60: 说明: 起草
- 61: 说明: 修订风险控制中的表格，增加了3栏，评审表建议添加wbs项目说明
- 62: 说明: 新开辟范围管理计划、质量管理计划、采购管理计划三个模块；干系人管理计划：新增干系人分析；期望管理矩阵；新增干系人登记表；时间管理计划：新增里程碑列表；新增工作量估算；风险管理计划：新增每个知识领域潜在风险条件；新增风险控制表（部分）；成本管理计划：新增项目成本估算；新增软件开发成本估算。
- 64: 说明: 补充了范围管理计划、风险控制的相关内容，在本文所引用的文本添加了索引号
- 68: 说明: 补充质量管理计划内容；补充分线控制计划表格；更新甘特图相关内容；
- 69: 说明: 增加封面和内容完善
- 70: 说明: 增加操作可行性
- 71: 说明: 更改了范围管理计划的内容，更新了甘特图
- 74: 说明: 增加SWOT分析、完善‘建议的系统’
- 75: 说明: 补充干系人登记表，修改内部沟通计划，修改质量保证计划，修改干系人分析表
- 76: 说明: 最终方案=>H5应用
- 77: 说明: 加入封面，修改分支命名规则
- 79: 说明: 加入提交日志书写规则
- 80: 说明: 更新配置管理、修改风险计划
- 81: 说明: 修改了干系人和更新了甘特图截图、风险管理
- 87: 说明: 删除了项目经理签字部分
- 88: 说明: 修改开发者内部沟通计划、修改开发者与客户的沟通，修改风险计划，增加干系人，新增课程里程碑
- 89: 说明: 重构范围管理计划的目录结构，并完善其中的内容
- 90: 说明: 更新甘特图的截图，更新目录
- 91: 说明: 更新资源分配报表图
- 93: 说明: 修改了参考文献处的中文句号，修改了任务分配表，将郑丞钧改为了计划调整员员，干系人部分将管理人员确定为彭彬老师，修正了同学的专业错误，修改了沟通计划的组内评审
- 94: 说明: 修改了工具部分，批注了技术部分
- 99: 说明: 已经存在相似应用，再次开发项目意义5.2节
- 101: 说明: 沟通管理计划中新增teambuilding；风险管理计划中新增触发条件
- 102: 说明: 增加了上下文图
- 103: 说明: 更新到11.11的工作描述，重新连接了网络图，添加新列“说明”并填充了部分内容

| ID | WBS | Task | Type | Duration | Start | Finish | Predecessors | Complete | Total slack | Constraint | Resources | Work | Actual work | 输入 | 输出 |
| --- | --- | --- | --- | --- | --- | --- | --- | --- | --- | --- | --- | --- | --- | --- | --- |
| 104 | 1.4.1.1.45 | 需求工程项目计划答辩ppt修订 |  | 0.06d? | 2018-11-11 12:24 A | 2018-11-11 12:54 A | 100 | 100% |  | finish no earlier than 2018-11-11 18:00 | 张嘉诚 | 0.5h | 0.5h | 需求工程项目计划答辩pptv0.2.3 | 需求工程项目计划答辩pptv0.2.4 |
| 105 | 1.4.1.1.46 | 原型修订 |  | 0.12d | 2018-11-13 19:00 A | 2018-11-13 20:00 A | 98 | 100% |  | start no earlier than 2018-11-13 09:00 | 赵豪杰 | 3h | 3h | 界面原型v0.1.1 | 界面原型v0.2.0 |
| 106 | 1.4.1.2 | **需求分析** |  | 6.25d? | 2018-11-18 12:00 A | 2018-12-02 21:00 A | 59 | 100% |  |  |  | 24.7h | 24.7h |  |  |
| 107 | 1.4.1.2.1 | 愿景与范围修订 |  | 0.01d? | 2018-11-18 12:00 A | 2018-11-18 12:06 A | 193, 102 | 100% |  |  | 罗培铖 | 0.1h | 0.1h | 愿景和范围文档v0.1.1 | 愿景和范围文档v0.1.2 |
| 108 | 1.4.1.2.2 | 愿景与范围修订 |  | 0.01d? | 2018-11-18 12:06 A | 2018-11-18 12:12 A | 107 | 100% |  |  | 罗培铖 | 0.1h | 0.1h | 愿景和范围文档v0.1.2 | 愿景和范围文档v0.1.3 |
| 109 | 1.4.1.2.3 | 愿景与范围材料 |  | 0.19d? | 2018-11-18 12:12 A | 2018-11-18 13:42 A | 108 | 100% |  |  | 张嘉诚 | 1.5h | 1.5h | 愿景和范围文档v0.1.3 | 愿景和范围文档材料 |
| 110 | 1.4.1.2.4 | 甘特图修订 |  | 0.09d? | 2018-11-18 12:00 A | 2018-11-18 12:42 A | 193, 103 | 100% |  |  | 郑丞钧 | 0.7h | 0.7h | 甘特图v1.3.0 | 甘特图v1.3.1 |
| 111 | 1.4.1.2.5 | 用户分类文档起草 |  | 0.12d | 2018-11-18 12:00 A | 2018-11-18 13:00 A | 193 | 100% |  |  | 郑丞钧 | 1h | 1h | 任务分配 | 用户分类文档v0.0.1 |
| 112 | 1.4.1.2.6 | 愿景与范围修订 |  | 0.01d | 2018-11-18 13:42 A | 2018-11-18 13:48 A | 109 | 100% |  |  | 罗培铖 | 0.1h | 0.1h | 愿景和范围文档材料 | 愿景和范围文档v0.1.4 |
| 113 | 1.4.1.2.7 | 需求工程项目计划修订 |  | 1d | 2018-11-18 12:00 A | 2018-11-18 21:00 A | 193, 101 | 100% |  |  | 赵豪杰 | 0.2h | 0.2h | 需求工程项目计划v1.2.13 | 需求工程项目计划v1.2.14 |
| 114 | 1.4.1.2.8 | 用户分类文档修订 |  | 0.09d? | 2018-11-22 19:00 A | 2018-11-22 19:42 A | 194, 111 | 100% |  | start no earlier than 2018-11-22 09:00 | 郑丞钧 | 0.7h | 0.7h | 用户分类文档v0.0.1 | 用户分类文档v0.1.0 |
| 115 | 1.4.1.2.9 | 愿景与范围修订 |  | 0.12d | 2018-11-22 19:00 A | 2018-11-22 20:00 A | 194, 112 | 100% |  | start no earlier than 2018-11-22 09:00 | 罗培铖 | 1h | 1h | 愿景和范围文档v0.1.4 | 愿景和范围文档v0.1.5 |
| 116 | 1.4.1.2.10 | 用户分类文档修订 |  | 0.04d | 2018-11-22 19:42 A | 2018-11-22 20:00 A | 114 | 100% |  | finish no earlier than 2018-11-22 18:00 | 郑丞钧 | 1.5h | 1.5h | 用户分类文档v0.1.0 | 用户分类文档v0.2.0 |
| 117 | 1.4.1.2.11 | 愿景与范围修订 |  | 0d | 2018-11-22 09:00 A | 2018-11-22 20:00 A | 115 | 100% |  |  | 赵豪杰 | 0.3h | 0.3h | 愿景和范围文档v0.1.5 | 愿景和范围文档v0.1.6 |
| 118 | 1.4.1.2.12 | 愿景与范围修订 |  | 0.03d | 2018-11-25 09:00 A | 2018-11-25 12:12 A | 117 | 100% |  |  | 赵豪杰 | 0.2h | 0.2h | 愿景和范围文档v0.1.6 | 愿景和范围文档v0.1.7 |
| 119 | 1.4.1.2.13 | 需求工程项目计划修订 |  | 0.19d | 2018-11-25 19:30 A | 2018-11-25 21:00 A | 198, 113 | 100% |  |  | 赵豪杰 | 1.5h | 1.5h | 需求工程项目计划v1.2.14 | 需求工程项目计划v1.2.15 |
| 120 | 1.4.1.2.14 | 原型修订 |  | 0.12d | 2018-11-28 19:00 A | 2018-11-28 20:00 A | 105 | 100% |  | start no earlier than 2018-11-28 09:00 | 苏碧青 | 8h | 8h | 界面原型v0.2.0 | 界面原型v0.5.0 |
| 121 | 1.4.1.2.15 | 软件需求规格说明起草 |  | 0.12d? | 2018-11-28 19:00 A | 2018-11-28 20:00 A | 201 | 100% |  | start no earlier than 2018-11-28 09:00 | 赵豪杰 | 2h | 2h | 访谈记录 | 软件需求规格说明v0.1.0 |
| 122 | 1.4.1.2.16 | 愿景与范围修订 |  | 0.01d | 2018-11-29 19:00 A | 2018-11-29 19:06 A | 118, 201 | 100% |  | start no earlier than 2018-11-29 09:00 | 罗培铖 | 0.1h | 0.1h | 愿景和范围文档v0.1.7 | 愿景和范围文档v0.1.8 |
| 123 | 1.4.1.2.17 | 用户分类文档修订 |  | 1d | 2018-12-01 12:00 A | 2018-12-01 21:00 A | 114, 201 | 100% |  | start no earlier than 2018-12-01 09:00 | 郑丞钧 | 0.1h | 0.1h | 用户分类文档v0.2.0 | 用户分类文档v0.2.1 |
| 124 | 1.4.1.2.18 | 需求工程项目计划修订 |  | 1d | 2018-12-02 12:00 A | 2018-12-02 21:00 A | 119, 202 | 100% |  | start no earlier than 2018-12-02 09:00 | 赵豪杰 | 0.6h | 0.6h | 需求工程项目计划v1.2.15 | 需求工程项目计划v1.2.16 |
| 125 | 1.4.1.2.19 | 原型修订 |  | 0.62d | 2018-12-02 12:00 A | 2018-12-02 21:00 A | 120, 202 | 100% |  | start no earlier than 2018-12-02 09:00 | 苏碧青 | 5h | 5h | 界面原型v0.5.0 | 界面原型v0.6.0 |
| 126 | 1.4.1.3 | **需求规格说明** |  | 8d? | 2018-12-03 19:00 A | 2018-12-24 20:00 A | 106 | 100% |  |  |  | 108h | 108h |  |  |
| 127 | 1.4.1.3.1 | 原型修订 |  | 0.12d | 2018-12-03 19:00 A | 2018-12-03 20:00 A | 125, 202 | 100% |  | finish no earlier than 2018-12-03 18:00 | 赵豪杰 | 5h | 5h | 界面原型v0.6.0 | 界面原型v0.7.0 |
| 128 | 1.4.1.3.2 | 用例说明起草 |  | 0.12d? | 2018-12-03 19:00 A | 2018-12-03 20:00 A | 202 | 100% |  | start no earlier than 2018-12-03 09:00 | 郑丞钧 | 2.5h | 2.5h | 任务分配 | 用例说明v0.1.0 |
| 129 | 1.4.1.3.3 | 用例图 |  | 0.12d? | 2018-12-06 19:00 A | 2018-12-06 20:00 A | 128, 202 | 100% |  | start no earlier than 2018-12-06 09:00 | 罗培铖 | 6h | 6h | 用例说明v0.1.0 | 用例图 |
| 130 | 1.4.1.3.4 | 原型修订 |  | 0.03d? | 2018-12-06 09:00 A | 2018-12-06 19:12 A | 127 | 100% |  |  | 赵豪杰 | 0.2h | 0.2h | 界面原型v0.7.0 | 界面原型v0.7.1 |
| 131 | 1.4.1.3.5 | 软件需求规格说明修订 |  | 0.12d? | 2018-12-07 19:00 A | 2018-12-07 20:00 A | 121 | 100% |  | start no earlier than 2018-12-07 09:00 | 赵豪杰 | 3h | 3h | 软件需求规格说明v0.1.0 | 软件需求规格说明v0.2.0 |
| 132 | 1.4.1.3.6 | 甘特图修订 |  | 1d? | 2018-12-09 12:00 A | 2018-12-09 21:00 A | 204, 110 | 100% |  | start no earlier than 2018-12-09 09:00 | 郑丞钧 | 2h | 2h | 甘特图v1.3.1 | 甘特图v1.4.0 |
| 133 | 1.4.1.3.7 | 软件需求规格说明修订 |  | 0.38d | 2018-12-09 12:00 A | 2018-12-09 15:00 A | 204, 131 | 100% |  | start no earlier than 2018-12-09 09:00 | 苏碧青 | 3h | 3h | 软件需求规格说明v0.2.0 | 软件需求规格说明v0.3.0 |
| 134 | 1.4.1.3.8 | QFD打分表起草 |  | 1d? | 2018-12-09 12:00 A | 2018-12-09 21:00 A | 204 | 100% |  | start no earlier than 2018-12-09 09:00 | 郑丞钧 | 0.1h | 0.1h | 任务分配 | QFD打分表 |
| 135 | 1.4.1.3.9 | 需求工程项目计划修订 |  | 0.12d? | 2018-12-12 09:00 A | 2018-12-12 20:00 A | 124, 204 | 100% |  | start no earlier than 2018-12-12 09:00 | 赵豪杰 | 2h | 2h | 需求工程项目计划v1.2.16 | 需求工程项目计划v1.3.0 |
| 136 | 1.4.1.3.10 | 需求工程项目章程起草 |  | 0d? | 2018-12-12 09:00 A | 2018-12-12 19:01 A | 135, 204 | 100% |  | start no earlier than 2018-12-12 09:00 | 赵豪杰 | 0.5h | 0.5h | 需求工程项目计划v1.3.0 | 需求工程项目章程v1.0.0 |
| 137 | 1.4.1.3.11 | 项目章程修订 |  | 0.01d? | 2018-12-12 19:00 A | 2018-12-12 19:06 A | 87, 204 | 100% |  | start no earlier than 2018-12-12 09:00 | 赵豪杰 | 0.1h | 0.1h | 项目章程v1.1.1 | 项目章程v1.1.2 |
| 138 | 1.4.1.3.12 | 软件开发计划修订 |  | 0.01d? | 2018-12-12 19:00 A | 2018-12-12 19:06 A | 94, 204 | 100% |  | start no earlier than 2018-12-12 09:00 | 赵豪杰 | 0.1h | 0.1h | 软件开发计划文档v1.1.5 | 软件开发计划文档v1.1.6 |
| 139 | 1.4.1.3.13 | 原型修订 |  | 0d | 2018-12-13 09:00 A | 2018-12-13 19:01 A | 130, 204 | 100% |  | start no earlier than 2018-12-12 09:00 | 赵豪杰 | 5h | 5h | 界面原型v0.7.1 | 界面原型v0.8.0 |
| 140 | 1.4.1.3.14 | 软件需求规格说明修订 |  | 0.03d? | 2018-12-14 19:00 A | 2018-12-14 19:12 A | 133 | 100% |  | start no earlier than 2018-12-14 09:00 | 苏碧青 | 0.2h | 0.2h | 软件需求规格说明v0.3.0 | 软件需求规格说明v0.4.0 |
| 141 | 1.4.1.3.15 | 原型修订 |  | 0.12d | 2018-12-14 09:00 A | 2018-12-14 20:00 A | 139 | 100% |  |  | 赵豪杰 | 1.5h | 1.5h | 界面原型v0.8.0 | 界面原型v0.8.1 |
| 142 | 1.4.1.3.16 | 用例说明修订 |  | 0.12d? | 2018-12-15 12:00 A | 2018-12-15 13:00 A | 204, 128 | 100% |  | start no earlier than 2018-12-15 09:00 | 郑丞钧 | 1h | 1h | 用例说明v0.1.0 | 用例说明v0.1.1 |
| 143 | 1.4.1.3.17 | 需求跟踪矩阵起草 |  | 0.19d? | 2018-12-16 12:00 A | 2018-12-16 13:30 A | 206 | 100% |  | start no earlier than 2018-12-16 09:00 | 苏碧青 | 1.5h | 1.5h | 需求 | 需求跟踪矩阵 |
| 144 | 1.4.1.3.18 | 需求可行性论证 |  | 0.7d | 2018-12-16 09:00 A | 2018-12-16 18:36 A | 206 | 100% |  |  | 苏碧青 | 1h | 1h | 需求跟踪矩阵 | 需求可行性论证 |
| 145 | 1.4.1.3.19 | 软件用户手册起草 |  | 0.62d? | 2018-12-16 12:00 A | 2018-12-16 17:00 A | 206, 141 | 100% |  | start no earlier than 2018-12-16 09:00 | 赵豪杰 | 5h | 5h | 界面原型v0.8.1 | 软件用户手册v0.1.0 |
| 146 | 1.4.1.3.20 | 需求条目详细信息报表 |  | 0.12d? | 2018-12-17 19:00 A | 2018-12-17 20:00 A | 206 | 100% |  | start no earlier than 2018-12-17 09:00 | 苏碧青 | 2h | 2h | 需求跟踪矩阵 | 需求条目详细信息报表 |
| 147 | 1.4.1.3.21 | 需求跟踪矩阵修订 |  | 0d? | 2018-12-17 09:00 A | 2018-12-17 09:00 A | 143 | 100% |  | start no earlier than 2018-12-17 09:00 | 苏碧青 | 1h | 1h | 需求跟踪矩阵 | 需求跟踪矩阵 |
| 148 | 1.4.1.3.22 | 用例说明修订 |  | 0.12d? | 2018-12-17 19:00 A | 2018-12-17 20:00 A | 142 | 100% |  | start no earlier than 2018-12-17 09:00 | 郑丞钧 | 2h | 2h | 用例说明v0.1.1 | 用例说明v0.1.2 |
| 149 | 1.4.1.3.23 | 后台界面原型起草 |  | 0.12d? | 2018-12-18 19:00 A | 2018-12-18 20:00 A | 207 | 100% |  | start no earlier than 2018-12-18 09:00 | 赵豪杰 | 5h | 5h | 访谈记录 | 渔乐生活后台界面v0.1.0 |
| 150 | 1.4.1.3.24 | 需求条目详细信息报表修订 |  | 0.07d? | 2018-12-19 19:00 A | 2018-12-19 19:36 A | 146 | 100% |  | start no earlier than 2018-12-19 09:00 | 苏碧青 | 0.6h | 0.6h | 需求条目详细信息报表 | 需求条目详细信息报表 |
| 151 | 1.4.1.3.25 | 需求跟踪矩阵修订 |  | 0.05d? | 2018-12-19 19:00 A | 2018-12-19 19:24 A | 147 | 100% |  | start no earlier than 2018-12-19 09:00 | 苏碧青 | 0.4h | 0.4h | 需求跟踪矩阵 | 需求跟踪矩阵 |
| 152 | 1.4.1.3.26 | 测试用例起草 |  | 0.12d? | 2018-12-20 19:00 A | 2018-12-20 20:00 A | 148 | 100% |  | start no earlier than 2018-12-20 09:00 | 罗培铖 | 5h | 5h | 用例说明v0.1.2 | 测试用例 |
| 153 | 1.4.1.3.27 | 原型修订 |  | 0.12d? | 2018-12-21 19:00 A | 2018-12-21 20:00 A | 210, 209, 141 | 100% |  |  | 赵豪杰 | 6h | 6h | 访谈记录，任务分配，界面原型v0.8.1 | 界面原型v0.8.2 |
| 154 | 1.4.1.3.28 | 原型修订 |  | 1d | 2018-12-22 12:00 A | 2018-12-22 21:00 A | 153 | 100% |  |  | 赵豪杰 | 5h | 5h | 界面原型v0.8.2 | 界面原型v0.8.3 |
| 155 | 1.4.1.3.29 | 状态图起草 |  | 1d | 2018-12-23 09:00 A | 2018-12-23 21:00 A | 210 | 100% |  |  | 苏碧青 | 2.5h | 2.5h | 任务分配 | 状态图 |
| 156 | 1.4.1.3.30 | 用例说明修订 |  | 1d | 2018-12-23 12:00 A | 2018-12-23 21:00 A | 210, 148 | 100% |  | start no earlier than 2018-12-23 09:00 | 郑丞钧 | 7.8h | 7.8h | 用例说明v0.1.2 | 用例说明1-41 |
| 157 | 1.4.1.3.31 | 软件用户手册修订 |  | 1d? | 2018-12-23 12:00 A | 2018-12-23 21:00 A | 210, 145, 154 | 100% |  | start no earlier than 2018-12-23 09:00 | 赵豪杰 | 8h | 8h | 软件用户手册v0.1.0，界面原型v0.8.3 | 软件用户手册v0.2.0 |
| 158 | 1.4.1.3.32 | 特性树 |  | 1d | 2018-12-23 12:00 A | 2018-12-23 21:00 A | 210 | 100% |  | start no earlier than 2018-12-23 09:00 | 苏碧青 | 1.5h | 1.5h | 任务分配 | 特性树 |
| 159 | 1.4.1.3.33 | 用户端用例图起草 |  | 0d? | 2018-12-23 21:00 A | 2018-12-23 21:00 A | 156 | 100% |  |  | 郑丞钧 | 3h | 3h | 用例说明1-41 | 用户端用例图 |
| 160 | 1.4.1.3.34 | 测试用例修订 |  | 0.38d? | 2018-12-23 12:00 A | 2018-12-23 15:00 A | 152 | 100% |  | start no earlier than 2018-12-23 09:00 | 罗培铖 | 3h | 3h | 测试用例 | 测试用例 |
| 161 | 1.4.1.3.35 | 软件需求规格说明修订 |  | 0.25d? | 2018-12-23 09:00 A | 2018-12-23 14:00 A | 140, 159, 157, 156 | 100% |  | start no earlier than 2018-12-23 09:00 | 苏碧青 | 2h | 2h | 软件需求规格说明v0.4.0，用例图，用户手册，用例说明 | 软件需求规格说明v0.5.0 |
| 162 | 1.4.1.3.36 | 数据字典、ER图起草 |  | 0.12d? | 2018-12-24 18:00 A | 2018-12-24 20:00 A | 210, 156 | 100% |  | start no earlier than 2018-12-24 09:00 | 张嘉诚 | 8h | 8h | 用例说明 | 数据字典，ER图 |
| 163 | 1.4.1.3.37 | 用例说明修订 |  | 0.12d | 2018-12-24 09:00 A | 2018-12-24 20:00 A | 210, 156 | 100% |  |  | 张嘉诚 | 5h | 5h | 用例说明 | 用例说明 |
| 164 | 1.4.1.3.38 | 管理员用例图起草 |  | 0d? | 2018-12-24 09:00 A | 2018-12-24 19:01 A | 163 | 100% |  |  | 张嘉诚 | 0.5h | 0.5h | 用例说明 | 用例图 |
| 165 | 1.4.1.4 | 验证 |  | 1d | 2018-10-21 19:00 | 2018-10-27 13:00 |  |  | 29.75d |  |  |  |  |  |  |
| 166 | 1.4.1.5 | 需求规格审核 | manual | 28.62d | 2018-10-21 19:00 | 2018-12-31 18:00 |  |  |  |  |  |  |  |  |  |
| 167 | 1.4.1.6 | 需求管理 | manual | 28.62d | 2018-10-21 19:00 | 2018-12-31 18:00 |  |  |  | finish no earlier than 2019-05-25 18:00 |  |  |  |  |  |

Notes:
- 104: 说明: 增加了可行性分析中已经存在现有系统为何还要继续开发的缘由并将最终方案改成h5的方案
- 105: 说明: 根据老师的要求修改了界面原型，并参考了神舟钓鱼网
- 107: 说明: 完善业务机遇
- 108: 说明: 完善业务风险
- 109: 说明: 愿景与范围文档的上下文图，鱼骨图，关联图，生态系统图_1.5hours_制作了愿景与范围文档的上下文图，鱼骨图，关联图，生态系统图
- 110: 说明: 更新到11.17的任务进度
- 111: 说明: 起草用户分类文档
- 113: 说明: 细化了绩效考核规则
- 114: 说明: 添加了用户模块们，修改了用户群的部分内容
- 115: 说明: 添加了鱼骨图，根据模板完善目录结构
- 116: 说明: 添加了用户代表及联系方式模块
- 117: 说明: 删除了业务风险，更新了干系人表
- 118: 说明: 增加了约钓功能的业务风险
- 119: 说明: 风险控制后面加入了AB角图，将Android端编码修改为H5端编码
- 121: 说明: 参照书本后面的模板填写了能填的部分
- 122: 说明: 量化成功指标，修改上下文图
- 123: 说明: 对第三部分作了小改动
- 124: 说明: 修改了风险部分不明确的地方，删除了需求工程有编码的部分
- 125: 说明: 补充部分界面
- 127: 说明: 增加钓鱼准备公告，换肤，颜色修改
- 128: 说明: 起草
- 130: 说明: 简化随便逛逛
- 131: 说明: 更换成IEEE的模板，并增加了业务规则等条目
- 132: 说明: 更新到12.1的任务进度
- 133: 说明: 根据课程要求调整文档模板；填写质量需求、用户界面部分
- 135: 说明: 修改了项目里程碑提交日期，删除了不属于需求项目部分的内容
- 136: 说明: 增加需求工程的章程
- 137: 说明: 修改了结束时间
- 138: 说明: 修改了结束时间
- 139: 说明: 减少了不必要的页面，将朋友圈修改成微博形式
- 140: 说明: 调整文档模板
- 141: 说明: 补充了收藏页面
- 142: 说明: 添加了新功能的用例说明，并对部分用例说明进行扩充，将抛弃的用例说明字体改成灰色
- 147: 说明: 根据统御导出矩阵完善
- 153: 说明: 按yc课堂访谈修改了界面，增加了游客部分
- 154: 说明: 改进了跳转问题
- 155: 说明: 状态图_地图界面、发起约钓、加入约钓、登陆、新建约钓、新建渔具店
- 156: 说明: 丰富用例说明的内容
- 157: 说明: 按照界面原型增加了处理过程说明
- 159: 说明: 增加了用户端的用例图
- 161: 说明: 补充用例说明、用例图、用户手册等内容
- 162: 说明: 绘制了E-R图并写入到word中
- 164: 说明: 绘制了管理端的用例图

| ID | WBS | Task | Duration | Start | Finish | Predecessors | Complete | Constraint | Resources | Work | Actual work | 输入 | 输出 | 说明 |
| --- | --- | --- | --- | --- | --- | --- | --- | --- | --- | --- | --- | --- | --- | --- |
| 168 | 1.5 | **项目控制** | 33.89d? | 2018-09-20 08:00 A | 2018-12-26 19:06 A |  | 100% |  |  | 107.62h | 107.62h |  |  |  |
| 169 | 1.5.1 | 任务分配 | 0.03d | 2018-09-20 08:00 A | 2018-09-20 08:12 A | 35 | 100% |  | 罗培铖; 苏碧青; 张嘉诚; 赵豪杰; 郑丞钧 | 1h | 1h | 项目任务书 | 会议记录、任务分配 |  |
| 170 | 1.5.2 | 第一次与杨枨老师进行访谈 | 0.03d | 2018-09-26 09:00 A | 2018-09-26 09:12 A | 36, 37 | 100% |  | 罗培铖; 苏碧青; 张嘉诚; 赵豪杰; 郑丞钧 | 1h | 1h | 谈话记录 | 录音资料 | 确认项目大致内容 |
| 171 | 1.5.3 | 第一次小组会议 | 0.03d | 2018-09-27 09:00 A | 2018-09-27 09:12 A | 170 | 100% |  | 罗培铖; 苏碧青; 张嘉诚; 赵豪杰; 郑丞钧 | 1h | 1h | 需求工程-初步任务分配 | 分配结果 |  |
| 172 | 1.5.4 | 第二次小组会议 | 0.03d | 2018-09-28 13:48 A | 2018-09-28 14:00 A | 40 | 100% |  | 罗培铖; 苏碧青; 张嘉诚; 赵豪杰; 郑丞钧 | 1h | 1h | 检查工作结果 | 工作改进建议 |  |
| 173 | 1.5.5 | 第二周绩效考评 | 0.06d? | 2018-09-30 18:00 A | 2018-09-30 18:30 A | 36, 37, 42, 43, 44, 45, 46 | 100% |  | 赵豪杰 | 0.5h | 0.5h | 第二周交付物 | 第二周绩效考评 |  |
| 174 | 1.5.6 | 第二次与杨枨老师进行访谈 | 0.03d | 2018-10-11 09:00 A | 2018-10-11 09:12 A | 173 | 100% |  | 罗培铖; 苏碧青; 张嘉诚; 赵豪杰; 郑丞钧 | 1h | 1h | 客户预约 | 得到开启正式访谈的充分必要条件 | 与杨枨老师进行非正式访谈 |
| 175 | 1.5.7 | 第三次小组会议 | 0.03d | 2018-10-11 10:36 A | 2018-10-11 10:48 A | 174 | 100% |  | 罗培铖; 苏碧青; 张嘉诚; 赵豪杰; 郑丞钧 | 1h | 1h | 得到开启正式访谈的充分必要条件 | 任务分配以及UML答辩准备 |  |
| 176 | 1.5.8 | 第三周绩效考评 | 0.06d | 2018-10-14 19:00 A | 2018-10-14 19:30 A | 47, 48, 49, 50 | 100% |  | 赵豪杰 | 0.5h | 0.5h | 第三周交付物 | 第三周绩效考评 |  |
| 177 | 1.5.9 | 第三次与杨枨老师进行访谈 | 0.12d | 2018-10-18 09:00 A | 2018-10-18 10:00 A | 176 | 100% |  | 罗培铖; 苏碧青; 张嘉诚; 赵豪杰; 郑丞钧 | 5h | 5h | 提出需求问题 | 获取需求，为定义愿景提供条件 | 与杨枨老师进行客户访谈 |
| 178 | 1.5.10 | 第四次小组会议 | 0.2d | 2018-10-18 09:00 A | 2018-10-18 10:36 A | 177 | 100% |  | 罗培铖; 苏碧青; 张嘉诚; 赵豪杰; 郑丞钧 | 1h | 1h | 学习笔记 | 会议记录 |  |
| 179 | 1.5.11 | 第四周绩效考评 | 0.06d | 2018-10-21 18:00 A | 2018-10-21 18:30 A | 51, 53, 55, 56, 60 | 100% |  | 赵豪杰 | 0.5h | 0.5h | 第四周交付物 | 第三周绩效考评 |  |
| 180 | 1.5.12 | 第五次小组会议 | 0.2d | 2018-10-25 09:00 A | 2018-10-25 10:36 A | 179 | 100% | finish no earlier than 2018-10-25 18:00 | 罗培铖; 苏碧青; 张嘉诚; 赵豪杰; 郑丞钧 | 8h | 8h | 学习笔记 | 会议记录 |  |
| 181 | 1.5.13 | 第一次组内评审 | 1d | 2018-10-28 09:00 A | 2018-10-28 17:00 A | 71, 70, 65, 66, 63, 60 | 100% |  | 罗培铖; 苏碧青; 张嘉诚; 赵豪杰; 郑丞钧 | 7h | 7h | 需求工程相关文档 | 评审记录，改进建议 |  |
| 182 | 1.5.14 | 第二次组内评审 | 0.12d | 2018-10-29 19:00 A | 2018-10-29 20:00 A | 72, 73, 74 | 100% |  | 罗培铖; 苏碧青; 张嘉诚; 赵豪杰; 郑丞钧 | 5h | 5h | 需求工程相关文档 | 评审记录，改进建议 |  |
| 183 | 1.5.15 | 第五周绩效考评 | 0.06d | 2018-10-30 09:00 A | 2018-10-30 09:30 A | 82, 81, 80, 78, 76, 73, 67, 66, 63 | 100% | start no earlier than 2018-10-30 09:00 | 赵豪杰 | 0.5h | 0.5h | 第五周交付物 | 第五周绩效考核 |  |
| 184 | 1.5.16 | 第四次与杨枨老师进行访谈 | 0.03d | 2018-11-01 09:00 A | 2018-11-01 09:12 A | 86, 183 | 100% |  | 罗培铖; 苏碧青; 张嘉诚; 赵豪杰; 郑丞钧 | 1h | 1h | 界面原型 | 访谈记录，改进建议 | 与杨枨老师进行客户访谈 |
| 185 | 1.5.17 | 第六次小组会议 | 0.88d | 2018-11-01 09:00 A | 2018-11-01 17:00 A | 184 | 100% |  | 罗培铖; 苏碧青; 张嘉诚; 赵豪杰; 郑丞钧 | 0.88h | 0.88h | 需求工程相关文档 | 改进建议 |  |
| 186 | 1.5.18 | 第六周绩效考评 | 1d | 2018-11-06 09:00 A | 2018-11-06 18:00 A | 95, 94, 93, 87, 86, 97, 96 | 100% |  | 赵豪杰 | 0.5h | 0.5h | 第六周交付物 | 第六周绩效考核 |  |
| 187 | 1.5.19 | 组内评审表起草 | 0.06d | 2018-11-06 09:00 A | 2018-11-06 09:30 A | 186 | 100% | start no earlier than 2018-11-06 09:00 | 赵豪杰 | 0.5h | 0.5h | 第六周绩效考核 | 组内评审表v0.1.0 |  |
| 188 | 1.5.20 | 第一次评审 | 0.33d | 2018-11-07 08:00 A | 2018-11-07 20:00 A | 95, 94, 93, 92, 87, 86, 85 | 100% |  | 罗培铖; 苏碧青; 张嘉诚; 赵豪杰; 郑丞钧 | 6.5h | 6.5h | 需求工程项目计划 | 评审通过，需求工程项目计划评审记录 |  |
| 189 | 1.5.21 | 第七次小组会议 | 0.93d | 2018-11-07 09:36 A | 2018-11-07 20:00 A | 188 | 100% |  | 罗培铖; 苏碧青; 张嘉诚; 赵豪杰; 郑丞钧 | 3.85h | 3.85h | 评审结果 | 团建计划，第七次小组会议纪要 |  |
| 190 | 1.5.22 | 团队建设 | 0.62d | 2018-11-09 09:00 A | 2018-11-10 17:00 A | 189 | 100% |  | 罗培铖; 苏碧青; 张嘉诚; 赵豪杰; 郑丞钧 | 25h | 25h | 团建计划，金钱，时间… | 吃喝van乐，表情包，鬼畜素材等 | 吃喝van乐，团队精神up↑... |
| 191 | 1.5.23 | 第七周绩效考评 | 0.4d? | 2018-11-11 09:00 A | 2018-11-11 15:12 A | 99, 100, 101, 103, 104, 102 | 100% |  | 赵豪杰 | 0.2h | 0.2h | 第七周交付物 | 第七周绩效考核 |  |
| 192 | 1.5.24 | 第五次与杨枨老师进行访谈 | 0.92d | 2018-11-15 08:40 A | 2018-11-15 17:00 A | 191 | 100% | finish no earlier than 2018-11-15 18:00 | 罗培铖; 苏碧青; 张嘉诚; 赵豪杰; 郑丞钧 | 2.5h | 2.5h | 第七周交付物 | 交流记录 | 与杨枨老师进行交流 |
| 193 | 1.5.25 | 第八次小组会议 | 0.26d | 2018-11-16 08:00 A | 2018-11-16 17:00 A | 192 | 100% | finish no earlier than 2018-11-16 18:00 | 苏碧青; 张嘉诚; 赵豪杰; 郑丞钧 | 1.97h | 1.97h | 访谈记录 | 会议记录 |  |
| 194 | 1.5.26 | 第八周绩效考评 | 0.41d | 2018-11-18 13:48 A | 2018-11-18 18:03 A | 107, 108, 109, 110, 111, 112, 113 | 100% |  | 赵豪杰 | 0.1h | 0.1h | 第八周交付物 | 第八周绩效考核 |  |
| 195 | 1.5.27 | 第九次小组会议 | 0d? | 2018-11-22 20:00 A | 2018-11-23 19:01 A | 194, 114, 115, 116, 117 | 100% | start no earlier than 2018-11-22 09:00 | 罗培铖; 苏碧青; 张嘉诚; 赵豪杰; 郑丞钧 | 5h | 5h | 第八周绩效考核，第九周部分任务 | 任务分配 |  |
| 196 | 1.5.28 | 第一次与管理员访谈 | 0.05d? | 2018-11-23 19:00 A | 2018-11-23 19:24 A | 195 | 100% | start no earlier than 2018-11-23 09:00 | 罗培铖; 赵豪杰 | 0.8h | 0.8h | 任务分配 | 访谈记录 |  |
| 197 | 1.5.29 | 第六次与杨枨老师进行访谈 | 0.19d? | 2018-11-25 15:30 A | 2018-11-25 18:00 A | 196 | 100% | finish no earlier than 2018-11-25 18:00 | 罗培铖; 苏碧青; 张嘉诚; 赵豪杰; 郑丞钧 | 7.5h | 7.5h | 界面原型 | 第六次与杨枨老师访谈记录 |  |
| 198 | 1.5.30 | 第六次与杨枨老师访谈要点整理 | 0.19d | 2018-11-25 18:00 A | 2018-11-25 19:30 A | 197 | 100% |  | 赵豪杰 | 1.5h | 1.5h | 第六次与杨枨老师访谈记录 | 第六次与杨枨老师访谈要点 |  |
| 199 | 1.5.31 | 第九周绩效考评 | 0d? | 2018-11-25 21:00 A | 2018-11-25 21:00 A | 114, 115, 116, 117, 118, 119 | 100% | start no earlier than 2018-11-25 09:00 | 赵豪杰 | 0.1h | 0.1h | 第九周交付物 | 第九周绩效考核 |  |
| 200 | 1.5.32 | 第十次小组会议 | 0.05d | 2018-11-27 19:00 A | 2018-11-27 19:24 A | 199 | 100% | start no earlier than 2018-11-27 09:00 | 罗培铖; 苏碧青; 张嘉诚; 赵豪杰; 郑丞钧 | 1.2h | 1.2h | 第九周绩效考核 | 会议记录 |  |
| 201 | 1.5.33 | 第六次与杨枨老师访谈纪要 | 0.04d | 2018-11-27 09:00 A | 2018-11-27 19:18 A | 197, 198 | 100% |  | 苏碧青 | 0.3h | 0.3h | 第六次与杨枨老师访谈要点、记录 | 第六次与杨枨老师访谈纪要 |  |
| 202 | 1.5.34 | 第十一次小组会议 | 0.1d? | 2018-11-29 09:00 A | 2018-11-29 19:55 A | 120, 122, 121 | 100% |  | 罗培铖; 苏碧青; 张嘉诚; 赵豪杰; 郑丞钧 | 2.17h | 2.17h | 上周总结 ,界面原型 | 任务分配,会议记录 |  |
| 203 | 1.5.35 | 第十周绩效考评 | 1d? | 2018-12-02 12:00 A | 2018-12-02 21:00 A | 120, 122, 123, 124, 125, 121 | 100% | start no earlier than 2018-12-02 09:00 | 赵豪杰 | 0.1h | 0.1h | 第十周交付物 | 第十周绩效考核 |  |
| 204 | 1.5.36 | 第十二次小组会议 | 0d? | 2018-12-06 20:00 A | 2018-12-06 20:00 A | 123, 124, 125, 127, 128, 129, 130, 203 | 100% | start no earlier than 2018-12-06 09:00 | 罗培铖; 苏碧青; 张嘉诚; 赵豪杰; 郑丞钧 | 2.85h | 2.85h | 上周总结 ,界面原型 | 任务分配,会议记录 |  |
| 205 | 1.5.37 | 第十一周绩效考评 | 0.01d | 2018-12-11 09:00 A | 2018-12-11 19:06 A | 127, 128, 129, 130, 131, 132, 133, 134 | 100% | start no earlier than 2018-12-11 09:00 | 赵豪杰 | 0.1h | 0.1h | 第十一周交付物 | 第十一周绩效考核 |  |
| 206 | 1.5.38 | 第十三次小组会议 | 0.06d? | 2018-12-15 12:00 A | 2018-12-15 12:30 A | 135, 136, 137, 138, 205, 139, 140, 141, 142 | 100% |  | 罗培铖; 苏碧青; 张嘉诚; 赵豪杰 | 1.12h | 1.12h | 上周总结 | 任务分配,会议记录 |  |
| 207 | 1.5.39 | 第一次管理员用户代表访谈 | 0.09d? | 2018-12-16 12:00 A | 2018-12-16 12:45 A | 206 | 100% | start no earlier than 2018-12-16 09:00 | 苏碧青; 赵豪杰 | 1h | 1h | 任务分配 | 会议记录 |  |
| 208 | 1.5.40 | 第十二周绩效考评 | 0d? | 2018-12-17 20:00 A | 2018-12-17 20:00 A | 135, 136, 137, 138, 139, 140, 141, 142, 143, 144, 145, 146, 147, 207 | 100% | start no earlier than 2018-12-17 09:00 | 赵豪杰 | 0.1h | 0.1h | 第十二周交付物 | 第十二周绩效考核 |  |
| 209 | 1.5.41 | 第七次与杨枨老师进行访谈 | 0.11d? | 2018-12-19 19:00 A | 2018-12-19 19:54 A | 141 | 100% | start no earlier than 2018-12-19 09:00 | 罗培铖; 苏碧青; 张嘉诚; 赵豪杰; 郑丞钧 | 4.6h | 4.6h | 界面原型v0.8.1 | 访谈记录 |  |
| 210 | 1.5.42 | 第十四次小组会议 | 0d? | 2018-12-20 18:00 A | 2018-12-20 20:00 A | 148, 149, 150, 151, 152, 209 | 100% | start no earlier than 2018-12-20 09:00 | 罗培铖; 苏碧青; 张嘉诚; 赵豪杰; 郑丞钧 | 2.09h | 2.09h | 上周总结 | 任务分配,会议记录 |  |
| 211 | 1.5.43 | 第十三周绩效考评 | 0.01d | 2018-12-26 09:00 A | 2018-12-26 19:06 A | 148, 149, 150, 151, 152, 153, 154, 155, 156, 157, 158, 159, 160, 161, 162, 163, 164 | 100% |  | 赵豪杰 | 0.1h | 0.1h | 第十三周交付物 | 第十三周绩效考核 |  |

| ID | WBS | Task | Duration | Start | Finish | Predecessors | Total slack | Constraint | Resources | Work | 输入 | 输出 |
| --- | --- | --- | --- | --- | --- | --- | --- | --- | --- | --- | --- | --- |
| 212 | 1.6 | **项目收尾** | 3d | 2019-01-13 16:00 | 2019-01-16 18:00 | 57 |  |  |  | 37.5h |  |  |
| 213 | 1.6.1 | 项目总结 | 1.12d | 2019-01-13 13:00 | 2019-01-16 18:00 | 57 | 0d | finish no earlier than 2019-01-16 18:00 | 赵豪杰 | 3h | 项目工作 | 项目总结 |
| 214 | 1.6.2 | 制作PPT | 1d | 2019-01-13 14:00 | 2019-01-16 18:00 |  | 0d | finish no earlier than 2019-01-16 18:00 | 张嘉诚 | 4h | ppt | 会议记录 |
| 215 | 1.6.3 | 答辩 | 0.5d | 2019-01-13 19:00 | 2019-01-16 18:00 |  | 0d | finish no earlier than 2019-01-16 18:00 | 罗培铖; 苏碧青; 张嘉诚; 赵豪杰; 郑丞钧 | 5h | 文档，作品 | 考评结果，期末成绩 |
| 216 | 1.6.4 | 配置管理系统提交 | 0.75d | 2019-01-13 14:00 | 2019-01-16 18:00 |  | 0d | finish no earlier than 2019-01-16 18:00 | 赵豪杰 | 0.5h | 文档，作品 | 文档，作品 |
| 217 | 1.6.5 | 散伙饭 | 0.62d | 2019-01-13 14:00 | 2019-01-16 18:00 |  | 0d | finish no earlier than 2019-01-16 18:00 | 罗培铖; 苏碧青; 张嘉诚; 赵豪杰; 郑丞钧 | 25h | 金钱，时间 | 吃喝van乐，表情包，鬼畜素材等 |
