Schedule from MS Project, 2018-09-14 to 2019-01-09, A marks actual dates.
Microsoft

## Calendars

- 标准: Mon-Fri 08:00-12:00, 13:00-17:00; Sat-Sun off. Exceptions (off unless hours are given): 2018-09-29 08:00-12:00, 13:00-17:00 (加班1), 2018-09-30 08:00-12:00, 13:00-17:00 (加班2), 2018-10-14 08:00-12:00, 13:00-17:00 (加班3), 2018-10-20 08:00-12:00, 13:00-17:00 (加班4), 2018-10-21 08:00-12:00, 13:00-17:00 (加班5), 2018-10-27 08:00-12:00, 13:00-17:00 (加班6), 2018-10-28 (加班7), 2018-11-03 08:00-12:00, 13:00-17:00 (加班8), 2018-11-04 08:00-12:00, 13:00-17:00 (加班9), 2018-11-10 08:00-12:00, 13:00-17:00 (加班10), 2018-11-11 08:00-12:00, 13:00-17:00 (加班11), 2018-11-24 08:00-12:00, 13:00-17:00 (加班12), 2018-11-25 08:00-12:00, 13:00-17:00 (加班13), 2019-01-05 08:00-12:00, 13:00-17:00, 2019-01-06 08:00-12:00, 13:00-17:00 (加班).

## Resources

| Resource |
| --- |
| 罗培铖 |
| 苏碧青 |
| 赵豪杰 |
| 张嘉诚 |
| 郑丞钧 |

## Schedule

| ID | WBS | Task | Type | Duration | Start | Finish | Predecessors | Complete | Remaining | Actual start | Actual finish | Total slack | Constraint | Resources | Work | Actual work | 输入 | 输出 |
| --- | --- | --- | --- | --- | --- | --- | --- | --- | --- | --- | --- | --- | --- | --- | --- | --- | --- | --- |
| 1 | 1 | **软件工程系列渔乐生活APP需求工程计划** |  | 95d | 2018-09-19 09:00 | 2019-01-09 18:00 |  | 18% | 78.37d | 2018-09-14 18:00 |  |  |  |  | 1560.8h | 196h |  |  |
| 2 | 1.1 | **项目启动** |  | 8d | 2018-09-19 09:00 | 2018-09-28 18:00 |  | 100% |  | 2018-09-19 08:00 | 2018-09-26 13:12 |  |  |  | 25.6h | 25.6h |  |  |
| 3 | 1.1.1 | 项目任务书下达 |  | 1d | 2018-09-19 08:00 A | 2018-09-19 17:00 A |  | 100% |  |  |  |  | finish no earlier than 2018-09-19 18:00 | 赵豪杰 | 8h | 8h | 项目任务书 | 项目确认 |
| 4 | 1.1.2 | logo设计 | manual | 1d | 2018-09-21 08:00 A | 2018-09-21 17:00 A | 73 | 100% |  |  |  |  |  | 苏碧青 | 8h | 8h | 素材 | 渔乐生活logo |
| 5 | 1.1.3 | 软件资源配置 | manual | 1d | 2018-09-21 08:00 A | 2018-09-21 17:00 A | 73 | 100% |  |  |  |  |  | 罗培铖 | 8h | 8h | 安装 | 软件资源 |
| 6 | 1.1.4 | 可行性分析文档完成 | manual | 0.2d | 2018-09-26 10:36 A | 2018-09-26 13:12 A | 74 | 100% |  |  |  |  |  | 罗培铖 | 1.6h | 1.6h | 初步可行性分析文档，可行性文档中的图表 | 可行性分析文档 |
| 7 | 1.2 | **项目计划** |  | 33.88d | 2018-09-14 18:00 | 2018-10-24 18:00 | 2 | 100% |  | 2018-09-27 09:00 | 2018-10-21 18:00 |  |  |  | 71.2h | 71.2h |  |  |
| 8 | 1.2.1 | 需求工程项目计划起草 | manual | 0.9d | 2018-09-27 09:00 A | 2018-09-28 08:12 A | 6 | 100% |  |  |  |  |  | 张嘉诚 | 7.2h | 7.2h | 分配结果 | 需求工程项目计划起草文档 |
| 9 | 1.2.2 | 甘特图 | manual | 0.9d | 2018-09-27 09:00 A | 2018-09-27 17:12 A | 6 | 100% |  |  |  |  |  | 郑丞钧 | 7.2h | 7.2h | 分配结果 | 甘特图 |
| 10 | 1.2.3 | OBS | manual | 0.4d | 2018-09-28 08:00 A | 2018-09-28 11:12 A | 9 | 100% |  |  |  |  |  | 苏碧青 | 3.2h | 3.2h | 甘特图 | WBS |
| 11 | 1.2.4 | WBS | manual | 0.5d | 2018-09-28 08:00 A | 2018-09-28 12:00 A | 9 | 100% |  |  |  |  |  | 苏碧青 | 4h | 4h | 甘特图 | OBS |
| 12 | 1.2.5 | 需求工程起草文档修订 | manual | 1d | 2018-09-28 14:36 A | 2018-09-29 14:36 A | 77 | 100% |  |  |  |  |  | 张嘉诚 | 8h | 8h | 需求工程项目计划起草文档 | 需求工程项目计划最终文档 |
| 13 | 1.2.6 | 项目章程起草 | manual | 1d | 2018-09-28 14:36 A | 2018-09-29 14:36 A | 77 | 100% |  |  |  |  |  | 赵豪杰 | 8h | 8h | 工作改进建议 | 项目章程起草文档 |
| 14 | 1.2.7 | 可行性分析文档修改 | milestone, manual | 1d | 2018-10-14 09:00 A | 2018-10-14 18:00 A | 6 | 100% |  |  |  |  |  | 罗培铖 | 8h | 8h | 可行性分析文档 | 可行性分析最终文档 |
| 15 | 1.2.8 | 项目总体计划起草 | manual | 1d | 2018-10-20 09:00 A | 2018-10-20 18:00 A | 80 | 100% |  |  |  |  |  | 苏碧青 | 8h | 8h | 访谈记录 | 项目总体计划起草文档 |
| 16 | 1.2.9 | 需求工程计划-初步 | milestone, manual | 1d | 2018-10-20 09:00 A | 2018-10-20 18:00 A | 80 | 100% |  |  |  |  |  | 张嘉诚 | 8h | 8h | 访谈记录 | 需求工程计划-初步文档 |
| 17 | 1.2.10 | 项目总体计划修订 | milestone, manual | 1d | 2018-10-21 09:00 A | 2018-10-21 18:00 A | 15 | 100% |  |  |  |  |  | 郑丞钧 | 8h | 8h | 项目总体计划起草文档 | 项目总体计划最终文档 |
| 18 | 1.2.11 | 项目章程修订 | milestone, manual | 0.2d | 2018-10-21 09:00 A | 2018-10-21 10:36 A | 13 | 100% |  |  |  |  |  | 赵豪杰 | 1.6h | 1.6h | 项目章程起草文档 | 项目章程最终文档 |
| 19 | 1.3 | **项目执行** |  | 63.88d | 2018-10-21 09:00 A | 2019-01-05 17:00 | 7 | 1% | 63.47d |  |  | 0d |  |  | 767.2h | 2.4h |  |  |
| 20 | 1.3.1 | **第一轮迭代** |  | 28.88d | 2018-10-21 09:00 A | 2018-11-21 18:00 | 7 | 2% | 28.39d |  |  | 0d |  |  | 213.6h | 2.4h |  |  |
| 21 | 1.3.1.1 | **需求获取** |  | 10d | 2018-10-21 09:00 A | 2018-10-31 18:00 | 80 | 7% | 9.32d |  |  |  |  |  | 35.2h | 2.4h |  |  |
| 22 | 1.3.1.1.1 | 定义愿景和范围 | manual | 0.3d | 2018-10-21 09:00 A | 2018-10-21 11:24 A | 80 | 100% |  |  |  |  |  | 赵豪杰 | 2.4h | 2.4h | 访谈记录 | 愿景和范围文档 |
| 23 | 1.3.1.1.2 | 确定需求开发过程 | manual | 0.3d | 2018-10-21 09:00 | 2018-10-21 11:24 | 80 |  |  |  |  |  |  | 赵豪杰 | 2.4h |  | 定义结果 | 开发过程 |
| 24 | 1.3.1.1.3 | 用户群分类 | manual | 0.3d? | 2018-10-21 09:00 | 2018-10-21 11:24 | 80 |  |  |  |  |  |  | 张嘉诚 | 2.4h |  | 软件使用目标 | 分类结果 |
| 25 | 1.3.1.1.4 | 选择产品代表 | manual | 0.3d? | 2018-10-23 09:00 | 2018-10-23 11:24 | 81 |  |  |  |  |  |  | 苏碧青 | 2.4h |  | 会议记录 | 选择结果 |
| 26 | 1.3.1.1.5 | 建立核心队伍 | manual | 0.2d | 2018-10-23 09:00 | 2018-10-23 10:36 | 81 |  |  |  |  |  |  | 赵豪杰 | 1.6h |  | 会议记录 | 核心队伍 |
| 27 | 1.3.1.1.6 | 确定使用实例 | manual | 0.2d | 2018-10-25 09:00 | 2018-10-25 10:36 | 82 |  |  |  |  |  |  | 郑丞钧 | 1.6h |  | 会议记录 | 使用实例 |
| 28 | 1.3.1.1.7 | 分析用户工作流程 | manual | 0.2d | 2018-10-25 09:00 | 2018-10-25 10:36 | 82 |  |  |  |  |  |  | 张嘉诚 | 1.6h |  | 用户工作流程 | 分析结果 |
| 29 | 1.3.1.1.8 | 确定质量属性 | milestone, manual | 0.2d | 2018-10-25 09:00 | 2018-10-25 10:36 | 82 |  |  |  |  |  |  | 苏碧青 | 1.6h |  | 确定质量属性 | 质量工程计划文档 |
| 30 | 1.3.1.1.9 | 检查问题报告 | manual | 1d | 2018-10-26 09:00 | 2018-10-26 18:00 | 29 |  |  |  |  |  |  |  | 8h |  | 检查问题报告 | 检查结果 |
| 31 | 1.3.1.1.10 | 需求重用 | manual | 1d | 2018-10-27 09:00 | 2018-10-27 18:00 | 30 |  |  |  |  |  |  | 苏碧青 | 8h |  | 用户需求 | 确认结果 |
| 32 | 1.3.1.1.11 | 需求整理 | manual | 0.4d | 2018-10-31 09:00 | 2018-10-31 13:12 | 83 |  |  |  |  |  |  | 郑丞钧 | 3.2h |  |  | 需求文档 |

| ID | WBS | Task | Type | Duration | Start | Finish | Predecessors | Total slack | Resources | Work | 输入 | 输出 |
| --- | --- | --- | --- | --- | --- | --- | --- | --- | --- | --- | --- | --- |
| 33 | 1.3.1.2 | **需求分析** |  | 4d | 2018-11-01 09:00 | 2018-11-04 18:00 | 21 |  |  | 36h |  |  |
| 34 | 1.3.1.2.1 | 绘制关联图 | manual | 1d | 2018-11-01 09:00 | 2018-11-01 18:00 | 32 |  | 苏碧青 | 8h | 需求内容 | 关联图 |
| 35 | 1.3.1.2.2 | 创建开发原型 | manual | 1d | 2018-11-01 09:00 | 2018-11-01 18:00 | 32 |  | 郑丞钧 | 8h | 关联图 | 需求原型 |
| 36 | 1.3.1.2.3 | 分析可行性 | manual | 1d? | 2018-11-01 09:00 | 2018-11-01 18:00 | 32 |  | 罗培铖 | 8h | 需求原型 | 可行性分析文档 |
| 37 | 1.3.1.2.4 | 确定需求优先级 | manual | 1d | 2018-11-01 09:00 | 2018-11-01 18:00 | 32 |  | 张嘉诚 | 8h | 可行性分析文档 | 需求优先级结果 |
| 38 | 1.3.1.2.5 | 编写数据字典 | manual | 0.2d | 2018-11-03 09:00 | 2018-11-03 10:36 | 86 |  | 张嘉诚 | 1.6h | 系统内容 | 数据字典 |
| 39 | 1.3.1.2.6 | 需求建模 | manual | 0.3d | 2018-11-02 14:00 | 2018-11-02 16:24 | 86 |  | 郑丞钧 | 2.4h | 系统内容 | 用例 |
| 40 | 1.3.1.3 | **需求规格说明** |  | 11d | 2018-11-05 09:00 | 2018-11-15 18:00 | 33 |  |  | 73.6h |  |  |
| 41 | 1.3.1.3.1 | 采用软件需求规格说明模板 | manual | 1d | 2018-11-05 09:00 | 2018-11-05 18:00 | 39 |  | 赵豪杰 | 8h | 访谈记录 | 模板采用结果 |
| 42 | 1.3.1.3.2 | 指明需求来源 | manual | 0.2d | 2018-11-06 08:00 | 2018-11-06 09:36 | 41 |  | 郑丞钧 | 1.6h | 需求记录 | 明确来源 |
| 43 | 1.3.1.3.3 | 钓鱼用户访谈 | manual | 1d | 2018-11-07 08:00 | 2018-11-07 17:00 | 42 |  | 罗培铖; 苏碧青; 张嘉诚; 赵豪杰; 郑丞钧 | 40h | 明确来源 | 访谈记录 |
| 44 | 1.3.1.3.4 | 为每个需求分配唯一标识 | manual | 1d? | 2018-11-09 08:00 | 2018-11-09 17:00 | 87 |  | 张嘉诚 | 8h | 会议记录 | 标识需求 |
| 45 | 1.3.1.3.5 | 记录业务规范 | manual | 1d? | 2018-11-12 08:00 | 2018-11-12 17:00 | 44 |  | 苏碧青 | 8h | 项目需求 | 业务规范 |
| 46 | 1.3.1.3.6 | 整理成需求规格说明书 | milestone, manual | 1d? | 2018-11-13 08:00 | 2018-11-13 17:00 | 45 |  | 赵豪杰 | 8h | 会议记录 | 需求规格说明书 |
| 47 | 1.3.1.4 | **验证** |  | 4d | 2018-11-16 09:00 | 2018-11-21 18:00 | 41 |  |  | 68.8h |  |  |
| 48 | 1.3.1.4.1 | 评审需求 | manual | 1d | 2018-11-16 08:00 | 2018-11-16 17:00 | 89 |  | 罗培铖; 苏碧青; 张嘉诚; 赵豪杰; 郑丞钧 | 40h | 需求规格说明书 | 评审结果 |
| 49 | 1.3.1.4.2 | 测试需求 | manual | 1d | 2018-11-19 09:00 | 2018-11-19 18:00 | 48 |  | 罗培铖; 苏碧青 | 16h | 评审结果 | 测试结果 |
| 50 | 1.3.1.4.3 | 原型修改 | manual | 1d? | 2018-11-20 08:00 | 2018-11-20 17:00 | 49 |  | 赵豪杰 | 8h | 测试结果 | 新的原型 |
| 51 | 1.3.1.4.4 | 软件需求变更文档 | milestone, manual | 0.3d | 2018-11-21 08:00 | 2018-11-21 10:24 | 50 |  | 郑丞钧 | 2.4h |  | 软件需求变更文档 |
| 52 | 1.3.1.4.5 | 系统设计与实现计划 | milestone, manual | 0.3d | 2018-11-21 08:00 | 2018-11-21 10:24 | 50 |  | 郑丞钧 | 2.4h |  | 系统设计与实现计划文档 |
| 53 | 1.3.2 | **第二次迭代** |  | 8d | 2018-11-22 08:00 | 2018-11-29 18:00 | 20 | 0d |  | 52.8h |  |  |
| 54 | 1.3.2.1 | **需求分析** |  | 5d | 2018-11-22 09:00 | 2018-11-26 18:00 | 20 |  |  | 28.8h |  |  |
| 55 | 1.3.2.1.1 | 细化用户需求 | manual | 1d? | 2018-11-22 08:00 | 2018-11-22 17:00 | 90 |  | 罗培铖 | 8h | 需求获取文档 | 更进后的需求文档 |
| 56 | 1.3.2.1.2 | 得出功能需求 | manual | 1d? | 2018-11-22 08:00 | 2018-11-22 17:00 | 90 |  | 苏碧青 | 8h | 更进后的需求文档 | 功能需求 |
| 57 | 1.3.2.1.3 | 修改数据字典 | manual | 1d? | 2018-11-23 08:00 | 2018-11-23 17:00 | 55, 56 |  | 张嘉诚 | 8h | 功能需求 | 新的数据字典 |
| 58 | 1.3.2.1.4 | 需求建模 | manual | 0.3d | 2018-11-24 09:00 | 2018-11-24 11:24 | 57 |  | 郑丞钧 | 2.4h | 新的数据字典 | 需求模型 |
| 59 | 1.3.2.1.5 | 软件概要设计说明 | milestone, manual | 0.3d | 2018-11-25 09:00 | 2018-11-25 11:24 | 58 |  | 张嘉诚 | 2.4h | 需求模型 | 软件概要设计说明书 |

| ID | WBS | Task | Type | Duration | Start | Finish | Predecessors | Complete | Remaining | Actual start | Total slack | Free slack | Constraint | Resources | Work | Actual work | 输入 | 输出 |
| --- | --- | --- | --- | --- | --- | --- | --- | --- | --- | --- | --- | --- | --- | --- | --- | --- | --- | --- |
| 60 | 1.3.2.2 | **原型开发** |  | 3d | 2018-11-27 09:00 | 2018-11-29 18:00 | 54 |  |  |  |  |  |  |  | 24h |  |  |  |
| 61 | 1.3.2.2.1 | 界面布局设计 | manual | 1d | 2018-11-27 08:00 | 2018-11-27 17:00 | 54 |  |  |  |  |  |  | 罗培铖 | 8h |  | 需求模型 | 界面原型 |
| 62 | 1.3.2.2.2 | 原件样式设计 | manual | 1d? | 2018-11-27 08:00 | 2018-11-27 17:00 | 54 |  |  |  |  |  |  | 苏碧青 | 8h |  | 需求模型 | 样式 |
| 63 | 1.3.2.2.3 | 总体构建 | manual | 1d? | 2018-11-28 08:00 | 2018-11-28 17:00 | 61, 62 |  |  |  |  |  |  | 赵豪杰 | 8h |  | 界面原型，样式 | 界面 |
| 64 | 1.3.3 | **编码/测试计划** |  | 15d | 2018-12-18 08:00 | 2019-01-05 17:00 | 101 |  |  |  |  |  |  |  | 500.8h |  |  |  |
| 65 | 1.3.3.1 | 培训计划 | milestone, manual | 1d | 2018-12-18 08:00 | 2018-12-18 17:00 | 101 |  |  |  |  |  |  | 罗培铖 | 8h |  | 界面原型，样式 | 培训计划 |
| 66 | 1.3.3.2 | Android端编码 |  | 8d | 2018-12-19 09:00 | 2018-12-31 09:00 | 65 |  |  |  | 0.28d | 0d | start no earlier than 2018-12-19 09:00 | 苏碧青; 张嘉诚; 罗培铖 | 192h |  | 代码 | 前端作品 |
| 67 | 1.3.3.3 | 服务器端编码 | manual | 8d | 2018-12-18 08:00 | 2018-12-27 17:00 | 101 |  |  |  |  |  |  | 赵豪杰; 郑丞钧 | 128h |  | 代码 | 后端作品 |
| 68 | 1.3.3.4 | 测试计划 | milestone, manual | 0.3d | 2018-12-31 09:00 | 2018-12-31 11:24 | 66, 67 |  |  |  |  |  |  | 罗培铖 | 2.4h |  | 安装部署计划 | 测试计划 |
| 69 | 1.3.3.5 | 联合调试 | manual | 4d | 2018-12-31 11:24 | 2019-01-04 11:24 | 68 |  |  |  |  |  |  | 罗培铖; 苏碧青; 张嘉诚; 赵豪杰; 郑丞钧 | 160h |  | 前端代码、后端代码 | 渔乐生活app |
| 70 | 1.3.3.6 | 安装部署计划 | milestone, manual | 0.3d | 2019-01-04 11:24 | 2019-01-04 14:48 | 69 |  |  |  |  |  |  | 罗培铖 | 2.4h |  | 渔乐生活app | 安装部署计划 |
| 71 | 1.3.3.7 | 系统维护计划 | milestone, manual | 1d? | 2019-01-04 14:48 | 2019-01-05 14:48 | 70 |  |  |  |  |  |  | 罗培铖 | 8h |  | 渔乐生活app | 安装部署计划 |
| 72 | 1.4 | **项目控制** |  | 95d | 2018-09-19 09:00 | 2019-01-09 18:00 |  | 11% | 84.72d | 2018-09-20 08:00 |  |  |  |  | 576.8h | 96.8h |  |  |
| 73 | 1.4.1 | 任务分配 | manual | 1d | 2018-09-20 08:00 A | 2018-09-20 17:00 A | 3 | 100% |  |  |  |  |  | 罗培铖; 苏碧青; 张嘉诚; 赵豪杰; 郑丞钧 | 40h | 40h | 项目任务书 | 会议记录、任务分配 |
| 74 | 1.4.2 | 与杨枨老师确认项目大致内容 | manual | 0.2d | 2018-09-26 09:00 A | 2018-09-26 10:36 A | 4, 5 | 100% |  |  |  |  |  | 罗培铖; 苏碧青; 张嘉诚; 赵豪杰; 郑丞钧 | 8h | 8h | 谈话记录 | 录音资料 |
| 75 | 1.4.3 | 小组会议 | manual | 0.1d | 2018-09-27 09:00 A | 2018-09-27 09:48 A | 6 | 100% |  |  |  |  |  | 罗培铖; 苏碧青; 张嘉诚; 赵豪杰; 郑丞钧 | 4h | 4h | 需求工程-初步任务分配 | 分配结果 |
| 76 | 1.4.4 | 组长检查 | manual | 0.1d | 2018-09-28 13:00 A | 2018-09-28 13:48 A | 8, 9, 10, 11 | 100% |  |  |  |  |  | 赵豪杰 | 0.8h | 0.8h | 检查工作结果 | 决定开会 |
| 77 | 1.4.5 | 小组会议 | manual | 0.1d | 2018-09-28 13:48 A | 2018-09-28 14:36 A | 76 | 100% |  |  |  |  |  | 罗培铖; 苏碧青; 张嘉诚; 赵豪杰; 郑丞钧 | 4h | 4h | 检查工作结果 | 工作改进建议 |
| 78 | 1.4.6 | 与杨枨老师进行非正式访谈 | manual | 0.2d | 2018-10-11 09:00 A | 2018-10-11 10:36 A | 12, 13 | 100% |  |  |  |  |  | 罗培铖; 苏碧青; 张嘉诚; 赵豪杰; 郑丞钧 | 8h | 8h | 客户预约 | 得到开启正式访谈的充分必要条件 |
| 79 | 1.4.7 | 小组会议 | manual | 0.2d | 2018-10-11 10:36 A | 2018-10-11 13:12 A | 78 | 100% |  |  |  |  |  | 罗培铖; 苏碧青; 张嘉诚; 赵豪杰; 郑丞钧 | 8h | 8h | 得到开启正式访谈的充分必要条件 | 任务分配以及UML答辩准备 |
| 80 | 1.4.8 | 与杨枨老师进行客户访谈 | manual | 0.6d | 2018-10-18 09:00 A | 2018-10-18 14:48 A | 79 | 100% |  |  |  |  |  | 罗培铖; 苏碧青; 张嘉诚; 赵豪杰; 郑丞钧 | 24h | 24h | 提出需求问题 | 获取需求，为定义愿景提供条件 |
| 81 | 1.4.9 | 小组会议 | manual | 0.2d | 2018-10-21 11:24 | 2018-10-21 14:00 | 22, 23, 24 |  |  |  |  |  |  | 罗培铖; 苏碧青; 张嘉诚; 赵豪杰; 郑丞钧 | 9.6h |  | 学习笔记 | 会议记录 |
| 82 | 1.4.10 | 与杨枨老师进行需求访谈 | manual | 0.2d | 2018-10-24 09:00 | 2018-10-24 10:36 | 26, 25 |  |  |  |  |  |  | 苏碧青; 张嘉诚; 赵豪杰; 郑丞钧; 罗培铖 | 8h |  | 会议记录 | 访谈记录 |
| 83 | 1.4.11 | 与杨枨老师进行需求确认 | manual | 0.2d | 2018-10-30 09:00 | 2018-10-30 10:36 | 27, 28, 29, 30, 31 |  |  |  |  |  |  | 苏碧青; 张嘉诚; 赵豪杰; 郑丞钧; 罗培铖 | 8h |  | 会议记录 | 访谈记录 |
| 84 | 1.4.12 | 小组会议 | manual | 0.2d? | 2018-11-02 09:00 | 2018-11-02 10:36 | 34, 35, 36, 37 |  |  |  |  |  |  | 苏碧青; 张嘉诚; 赵豪杰; 郑丞钧; 罗培铖 | 8h |  | 需求模型 | 会议记录 |
| 85 | 1.4.13 | 与杨枨老师进行需求访谈 | manual | 0.2d | 2018-11-02 10:36 | 2018-11-02 13:12 | 84 |  |  |  |  |  |  | 罗培铖; 苏碧青; 张嘉诚; 赵豪杰; 郑丞钧 | 8h |  | 会议记录 | 访谈记录 |
| 86 | 1.4.14 | 小组会议 | manual | 0.1d | 2018-11-02 13:12 | 2018-11-02 14:00 | 85 |  |  |  |  |  |  | 罗培铖; 苏碧青; 张嘉诚; 赵豪杰; 郑丞钧 | 4h |  | 访谈记录 | 任务分配 |
| 87 | 1.4.15 | 小组会议 | manual | 1d? | 2018-11-08 08:00 | 2018-11-08 17:00 | 43 |  |  |  |  |  |  | 罗培铖; 苏碧青; 张嘉诚; 赵豪杰; 郑丞钧 | 40h |  | 访谈记录 | 会议记录 |
| 88 | 1.4.16 | 与杨枨老师进行交流 | manual | 1d | 2018-11-14 08:00 | 2018-11-14 17:00 | 46 |  |  |  |  |  |  | 罗培铖; 苏碧青; 张嘉诚; 赵豪杰; 郑丞钧 | 40h |  | 需求规格说明书 | 交流记录 |
| 89 | 1.4.17 | 小组会议 | manual | 1d | 2018-11-15 08:00 | 2018-11-15 17:00 | 88 |  |  |  |  |  |  | 罗培铖; 苏碧青; 张嘉诚; 赵豪杰; 郑丞钧 | 40h |  | 交流记录 | 会议记录 |
| 90 | 1.4.18 | 小组会议 | manual | 1d? | 2018-11-21 08:00 | 2018-11-21 17:00 | 50 |  |  |  |  |  |  | 罗培铖; 苏碧青; 张嘉诚; 赵豪杰; 郑丞钧 | 40h |  | 原型 | 会议记录 |
| 91 | 1.4.19 | 与杨枨老师进行交流 | manual | 0.2d? | 2018-11-29 08:00 | 2018-11-29 09:36 | 63 |  |  |  |  |  |  | 罗培铖; 苏碧青; 张嘉诚; 赵豪杰; 郑丞钧 | 8h |  | 会议记录 | 访谈记录 |
| 92 | 1.4.20 | 小组会议 | manual | 0.3d | 2018-11-29 09:36 | 2018-11-29 12:00 | 91 |  |  |  |  |  |  | 罗培铖; 苏碧青; 张嘉诚; 赵豪杰; 郑丞钧 | 12h |  | 访谈记录 | 会议记录 |

| ID | WBS | Task | Type | Duration | Start | Finish | Predecessors | Resources | Work | 输入 | 输出 |
| --- | --- | --- | --- | --- | --- | --- | --- | --- | --- | --- | --- |
| 93 | 1.4.21 | **需求规格审核** |  | 5d | 2018-11-30 09:00 | 2018-12-06 18:00 | 92 |  | 152h |  |  |
| 94 | 1.4.21.1 | 审查需求文档 | manual | 1d? | 2018-11-29 13:00 | 2018-11-30 12:00 | 92 | 赵豪杰 | 8h | 需求规格说明书 | 审查结果 |
| 95 | 1.4.21.2 | 小组会议 | manual | 1d? | 2018-11-30 13:00 | 2018-12-03 12:00 | 94 | 罗培铖; 苏碧青; 张嘉诚; 赵豪杰; 郑丞钧 | 40h | 审查结果 | 会议记录 |
| 96 | 1.4.21.3 | 编写需求文档 | manual | 1d? | 2018-12-03 13:00 | 2018-12-04 12:00 | 95 | 罗培铖 | 8h | 会议记录 | 需求文档 |
| 97 | 1.4.21.4 | 编写用户手册 | manual | 1d? | 2018-12-03 13:00 | 2018-12-04 12:00 | 95 | 苏碧青 | 8h | 需求文档 | 用户手册 |
| 98 | 1.4.21.5 | 确定合格的标准 | manual | 1d? | 2018-12-03 13:00 | 2018-12-04 12:00 | 95 | 张嘉诚 | 8h | 用户手册 | 合格标准 |
| 99 | 1.4.21.6 | 小组会议 | manual | 1d? | 2018-12-04 13:00 | 2018-12-05 12:00 | 96, 97, 98 | 罗培铖; 苏碧青; 张嘉诚; 赵豪杰; 郑丞钧 | 40h | 需求文档，用户手册，合格标准 | 会议记录 |
| 100 | 1.4.21.7 | 与杨枨老师进行交流 | manual | 1d? | 2018-12-05 13:00 | 2018-12-06 12:00 | 99 | 罗培铖; 苏碧青; 张嘉诚; 赵豪杰; 郑丞钧 | 40h | 会议记录 | 交流记录 |
| 101 | 1.4.22 | **需求管理** |  | 7d | 2018-12-07 08:00 | 2018-12-17 17:00 | 93 |  | 102.4h |  |  |
| 102 | 1.4.22.1 | 小组会议 | manual | 1d? | 2018-12-07 08:00 | 2018-12-07 17:00 | 93 | 罗培铖; 苏碧青; 张嘉诚; 赵豪杰; 郑丞钧 | 40h | 交流记录 | 会议记录 |
| 103 | 1.4.22.2 | 确定变更控制过程 | manual | 0.3d? | 2018-12-10 08:00 | 2018-12-10 10:24 | 102 | 赵豪杰 | 2.4h | 会议记录 | 变更控制过程 |
| 104 | 1.4.22.3 | 建立变更控制委员会 | manual | 0.3d? | 2018-12-10 08:00 | 2018-12-10 10:24 | 102 | 赵豪杰 | 2.4h | 变更控制过程 | 变更控制委员会 |
| 105 | 1.4.22.4 | 进行变更影响分析 | manual | 1d? | 2018-12-10 10:24 | 2018-12-11 10:24 | 103, 104 | 罗培铖 | 8h | 变更控制委员会 | 变更影响分析 |
| 106 | 1.4.22.5 | 跟踪每一项变更 | manual | 1d? | 2018-12-11 10:24 | 2018-12-12 10:24 | 105 | 郑丞钧 | 8h | 变更影响分析 | 跟踪状态记录 |
| 107 | 1.4.22.6 | 编写需求文档的基准版本和控制版本 | manual | 1d? | 2018-12-12 10:24 | 2018-12-13 10:24 | 106 | 苏碧青 | 8h | 跟踪状态记录 | 需求文档基准版本和控制版本 |
| 108 | 1.4.22.7 | 维护变更历史纪录 | manual | 0.2d | 2018-12-13 10:24 | 2018-12-13 12:00 | 107 | 张嘉诚 | 1.6h | 需求文档基准版本和控制版本 | 维护结果 |
| 109 | 1.4.22.8 | 小组会议 | manual | 0.2d | 2018-12-13 10:24 | 2018-12-13 12:00 | 107 | 罗培铖; 苏碧青; 张嘉诚; 赵豪杰; 郑丞钧 | 8h | 维护结果 | 会议记录 |
| 110 | 1.4.22.9 | 跟踪需求状态 | manual | 1d? | 2018-12-13 13:00 | 2018-12-14 12:00 | 109 | 赵豪杰 | 8h | 会议记录 | 跟踪状态记录 |
| 111 | 1.4.22.10 | 衡量需求稳定性 | manual | 1d? | 2018-12-13 13:00 | 2018-12-14 12:00 | 109 | 罗培铖 | 8h | 跟踪状态记录 | 需求稳定性记录 |
| 112 | 1.4.22.11 | 使用需求管理工具 | manual | 1d? | 2018-12-14 13:00 | 2018-12-17 12:00 | 110, 111 | 郑丞钧 | 8h | 需求稳定性记录 | 存储需求 |
| 113 | 1.5 | **项目收尾** |  | 4d | 2019-01-06 09:00 | 2019-01-09 18:00 | 64 |  | 120h |  |  |
| 114 | 1.5.1 | 项目总结 | milestone, manual | 1d | 2019-01-06 08:00 | 2019-01-06 17:00 | 64 | 罗培铖; 苏碧青; 张嘉诚; 赵豪杰; 郑丞钧 | 40h | 项目工作 | 项目总结 |
| 115 | 1.5.2 | 制作PPT | manual | 1d | 2019-01-07 08:00 | 2019-01-07 17:00 | 114 | 罗培铖; 苏碧青; 张嘉诚; 赵豪杰; 郑丞钧 | 40h | ppt | 会议记录 |
| 116 | 1.5.3 | 答辩 | manual | 1d | 2019-01-09 09:00 | 2019-01-09 18:00 | 115 | 罗培铖; 苏碧青; 张嘉诚; 赵豪杰; 郑丞钧 | 40h | 文档，作品 | 考评结果，期末成绩 |

| ID | WBS | Task | Type | Duration | Start | Finish | Predecessors | Complete | Remaining | Resources | Work | Actual work | 输入 | 输出 |
| --- | --- | --- | --- | --- | --- | --- | --- | --- | --- | --- | --- | --- | --- | --- |
| 117 | 2 | **UML翻转课堂** |  | 26d | 2018-10-15 09:00 A | 2018-11-10 18:00 |  | 48% | 13.42d |  | 155.2h | 88h |  |  |
| 118 | 2.1 | UML学习 | manual | 1d | 2018-10-15 09:00 A | 2018-10-15 18:00 A |  | 100% |  | 罗培铖; 苏碧青; 张嘉诚; 赵豪杰; 郑丞钧 | 40h | 40h |  |  |
| 119 | 2.2 | UML概论及ppt制作 | manual | 1d | 2018-10-16 09:00 A | 2018-10-16 18:00 A | 118 | 100% |  | 张嘉诚 | 8h | 8h | UML学习 | UML概论ppt |
| 120 | 2.3 | UML评审 | manual | 1d | 2018-10-19 09:00 A | 2018-10-19 18:00 A | 119 | 100% |  | 罗培铖; 苏碧青; 张嘉诚; 赵豪杰; 郑丞钧 | 40h | 40h | UML概论ppt | 评审通过 |
| 121 | 2.4 | UML工具:Rational Rose及ppt制作 | manual | 0.4d | 2018-10-20 08:00 | 2018-10-20 11:12 | 120 |  |  | 张嘉诚 | 3.2h |  | UML学习 | UML工具:Rational Rose ppt |
| 122 | 2.5 | UML学习 | manual | 0.2d | 2018-10-24 09:00 | 2018-10-24 10:36 | 121 |  |  | 罗培铖; 苏碧青; 张嘉诚; 赵豪杰; 郑丞钧 | 8h |  |  |  |
| 123 | 2.6 | UML评审 | manual | 0.2d | 2018-10-26 09:00 | 2018-10-26 10:36 | 122 |  |  | 罗培铖; 苏碧青; 张嘉诚; 赵豪杰; 郑丞钧 | 8h |  | UML概论ppt | 评审通过 |
| 124 | 2.7 | UML基础1:ppt | manual | 1d | 2018-10-27 09:00 | 2018-10-27 18:00 | 123 |  |  | 张嘉诚 | 8h |  |  |  |
| 125 | 2.8 | UML学习 | manual | 0.2d | 2018-10-29 08:00 | 2018-10-29 09:36 | 124 |  |  | 罗培铖; 苏碧青; 张嘉诚; 赵豪杰; 郑丞钧 | 8h |  |  |  |
| 126 | 2.9 | 基础2:ppt | manual | 0.5d | 2018-11-02 09:00 | 2018-11-02 14:00 | 125 |  |  | 张嘉诚 | 4h |  |  |  |
| 127 | 2.10 | UML评审 | manual | 0.2d | 2018-11-03 09:00 | 2018-11-03 10:36 | 126 |  |  | 罗培铖; 苏碧青; 张嘉诚; 赵豪杰; 郑丞钧 | 8h |  |  |  |
| 128 | 2.11 | UML学习 | manual | 0.2d | 2018-11-06 09:00 | 2018-11-06 10:36 | 127 |  |  | 罗培铖; 苏碧青; 张嘉诚; 赵豪杰; 郑丞钧 | 8h |  |  |  |
| 129 | 2.12 | UML评审 | manual | 0.3d | 2018-11-10 09:00 | 2018-11-10 11:24 | 128 |  |  | 罗培铖; 苏碧青; 张嘉诚; 赵豪杰; 郑丞钧 | 12h |  |  |  |
